# [AE Trazabilidad] Cronograma de Actividades 1.0

Schedule from MS Project, 2017-03-06 to 2017-12-15, status date 2017-09-25, costs in S/., A marks actual dates.

## Calendars

- Estándar: Mon-Fri 09:00-13:00, 14:00-18:00; Sat-Sun off. Exceptions (off unless hours are given): 2017-04-13 to 2017-04-14 (Semana santa), 2017-05-01 (Día del Trabajo), 2017-06-29 to 2017-06-30 (San Pedro y San Pablo), 2017-07-28 (Fiestas Patrias), 2017-08-30 (Santa Rosa de Lima), 2017-11-01 (Día de todos los santos), 2017-12-08 (Día de la Inmaculada Concepción).

## Resources

| Resource | Rate |
| --- | --- |
| Huaraquispe Aranda Gerardo Manuel | 37.5 |
| López Cárdenas Edward Pavel | 31.25 |
| Luna Vasquez Julio Bryan | 31.25 |
| Trebejo Loayza Waldo Jefferson | 31.25 |
| Fernandez Gargurevich Miguel | 31.25 |
| Descalzi Santos Luis Armando |  |
| De la Cruz Masías Alexander Romulo | 31.25 |
| Guzman Garay Fátima Fiorella |  |
| Acevedo Risco Melannie Cecilia |  |
| Calderon Valenzuela Wilfredo |  |
| Tume Ledesma Waldir |  |
| Herrera Abad Sonia |  |
| Quiñones Casas Duglas |  |
| Horna Leon Manuel |  |
| Marquez Aylas Edgard |  |
| Analista de AFCCTI |  |
| Del Piélago Alva Marleny |  |
| Apaza Aranda Oliver | 31.25 |
| Neyra Villanueva Cesar | 37.5 |
| Oficina de Calidad de Datos |  |
| Gerencia de Fiscalización |  |
| Castañeda Contreras Cristhofer David |  |
| Celis Llave Luis Augusto |  |

## Schedule

| ID | WBS | Task | Type | Duration | Start | Finish | Predecessors | Complete | Remaining | Baseline start | Baseline finish | Baseline duration | Total slack | Constraint | Resources | Work | Actual work | Cost | Baseline cost | Actual cost |
| --- | --- | --- | --- | --- | --- | --- | --- | --- | --- | --- | --- | --- | --- | --- | --- | --- | --- | --- | --- | --- |
| 1 | 1 | **AE 2017:** |  | 196d | 2017-03-06 A | 2017-12-15 |  | 73% | 52.99d | 2017-03-06 | 2017-12-15 | 196d | 0d |  |  | 4096.61h | 3138.59h | 88,272.19 | 87,524.06 | 63,303.44 |
| 2 | 1.1 | **Actividades de Gestión** |  | 196d | 2017-03-06 A | 2017-12-15 |  | 75% | 48.52d | 2017-03-06 | 2017-12-15 | 196d | 0d |  |  | 1241.66h | 1036.24h | 16,824.06 | 16,824.06 | 14,335.94 |
| 3 | 1.1.1 | **Planificación** |  | 18d | 2017-04-24 A | 2017-05-18 A |  | 100% |  | 2017-04-24 | 2017-05-18 | 18d |  |  |  | 68.48h | 68.48h |  |  |  |
| 4 | 1.1.1.1 | **Gestión del Alcance** |  | 18d | 2017-04-24 A | 2017-05-18 A |  | 100% |  | 2017-04-24 | 2017-05-18 | 18d |  |  |  | 68.48h | 68.48h |  |  |  |
| 5 | 1.1.1.1.1 | Elaborar Documento de Alcance |  | 16d | 2017-04-24 A | 2017-05-16 A |  | 100% |  | 2017-04-24 | 2017-05-16 | 16d |  | start no earlier than 2017-04-24 | Acevedo Risco Melannie Cecilia [50%] | 64h | 64h |  |  |  |
| 6 | 1.1.1.1.2 | Reunión de revisión de Alcance |  | 1d | 2017-05-17 A | 2017-05-17 A | 5 | 100% |  | 2017-05-17 | 2017-05-17 | 1d |  |  | Calderon Valenzuela Wilfredo [10%]; Guzman Garay Fátima Fiorella [10%]; Herrera Abad Sonia [2%]; Horna Leon Manuel [2%]; Quiñones Casas Duglas [2%]; Tume Ledesma Waldir [2%] | 2.24h | 2.24h |  |  |  |
| 7 | 1.1.1.1.3 | Firma de Documento de Alcance |  | 1d | 2017-05-18 A | 2017-05-18 A | 6 | 100% |  | 2017-05-18 | 2017-05-18 | 1d |  |  | Calderon Valenzuela Wilfredo [10%]; Guzman Garay Fátima Fiorella [10%]; Herrera Abad Sonia [2%]; Horna Leon Manuel [2%]; Quiñones Casas Duglas [2%]; Tume Ledesma Waldir [2%] | 2.24h | 2.24h |  |  |  |
| 8 | 1.1.1.1.4 | Declaración de Alcance | milestone | 0d | 2017-05-18 A | 2017-05-18 A | 7 | 100% |  | 2017-05-18 | 2017-05-18 |  |  |  |  |  |  |  |  |  |
| 9 | 1.1.2 | **Ejecución** |  | 196d | 2017-03-06 A | 2017-12-15 |  | 79% | 40.32d | 2017-03-06 | 2017-12-15 | 196d | 0d |  |  | 1032.08h | 898.16h | 16,510 | 16,510 | 14,125 |
| 10 | 1.1.2.1 | **Gestión de las Adquisiciones** |  | 196d | 2017-03-06 A | 2017-12-15 |  | 79% | 40.32d | 2017-03-06 | 2017-12-15 | 196d | 0d |  |  | 1032.08h | 898.16h | 16,510 | 16,510 | 14,125 |
| 11 | 1.1.2.1.1 | **Servicio de Terceros - Especialista de Procesos** |  | 188d | 2017-03-06 A | 2017-12-04 |  | 76% | 44.53d | 2017-03-06 | 2017-12-04 | 188d | 8d |  |  | 202.24h | 163.36h | 3,350 | 3,350 | 2,675 |
| 12 | 1.1.2.1.1.1 | Contratación EP: DOAA |  | 2d | 2017-03-06 A | 2017-03-07 A |  | 100% |  | 2017-03-06 | 2017-03-07 | 2d |  |  | Acevedo Risco Melannie Cecilia [10%]; Del Piélago Alva Marleny [30%]; Quiñones Casas Duglas [5%] | 7.2h | 7.2h |  |  |  |
| 13 | 1.1.2.1.1.2 | Inducción |  | 5d | 2017-03-08 A | 2017-03-14 A | 12 | 100% |  | 2017-03-08 | 2017-03-14 | 5d |  |  | Acevedo Risco Melannie Cecilia [10%]; Analista de AFCCTI [10%]; Apaza Aranda Oliver; Del Piélago Alva Marleny [10%]; Descalzi Santos Luis Armando [10%]; Guzman Garay Fátima Fiorella [10%]; Marquez Aylas Edgard [10%] | 64h | 64h | 1,250 | 1,250 | 1,250 |
| 14 | 1.1.2.1.1.3 | Informe Mensual N°1 - Marzo |  | 3d | 2017-04-05 A | 2017-04-07 A | 13SS+20d | 100% |  | 2017-04-05 | 2017-04-07 | 3d |  |  | Acevedo Risco Melannie Cecilia [10%]; Guzman Garay Fátima Fiorella [10%]; Herrera Abad Sonia [2%]; Quiñones Casas Duglas [2%]; Apaza Aranda Oliver [30%] | 12.96h | 12.96h | 225 | 225 | 225 |
| 15 | 1.1.2.1.1.4 | Informe Mensual N°2 - Abril |  | 3d | 2017-05-04 A | 2017-05-08 A | 13SS+38d | 100% |  | 2017-05-04 | 2017-05-08 | 3d |  |  | Acevedo Risco Melannie Cecilia [10%]; Guzman Garay Fátima Fiorella [10%]; Herrera Abad Sonia [2%]; Quiñones Casas Duglas [2%]; Apaza Aranda Oliver [30%] | 12.96h | 12.96h | 225 | 225 | 225 |
| 16 | 1.1.2.1.1.5 | Contratación EP: ARDLCM |  | 2d | 2017-05-09 A | 2017-05-10 A | 15 | 100% |  | 2017-05-09 | 2017-05-10 | 2d |  |  | Acevedo Risco Melannie Cecilia [10%]; Del Piélago Alva Marleny [30%]; Quiñones Casas Duglas [5%] | 7.2h | 7.2h |  |  |  |
| 17 | 1.1.2.1.1.6 | Inducción |  | 2d | 2017-05-11 A | 2017-05-12 A | 16 | 100% |  | 2017-05-11 | 2017-05-12 | 2d |  |  | Acevedo Risco Melannie Cecilia [10%]; Descalzi Santos Luis Armando [10%]; Guzman Garay Fátima Fiorella [10%]; De la Cruz Masías Alexander Romulo | 7.2h | 7.2h | 75 | 75 | 75 |
| 18 | 1.1.2.1.1.7 | Informe Mensual N°1 - Mayo/Junio |  | 3d | 2017-06-08 A | 2017-06-12 A | 17SS+20d | 100% |  | 2017-06-08 | 2017-06-12 | 3d |  |  | Acevedo Risco Melannie Cecilia [10%]; De la Cruz Masías Alexander Romulo [30%]; Guzman Garay Fátima Fiorella [10%]; Herrera Abad Sonia [2%]; Quiñones Casas Duglas [2%] | 12.96h | 12.96h | 225 | 225 | 225 |
| 19 | 1.1.2.1.1.8 | Informe Mensual N°2 - Junio/Julio |  | 3d | 2017-07-10 A | 2017-07-12 A | 17SS+40d | 100% |  | 2017-07-10 | 2017-07-12 | 3d |  |  | Acevedo Risco Melannie Cecilia [10%]; De la Cruz Masías Alexander Romulo [30%]; Guzman Garay Fátima Fiorella [10%]; Herrera Abad Sonia [2%]; Quiñones Casas Duglas [2%] | 12.96h | 12.96h | 225 | 225 | 225 |
| 20 | 1.1.2.1.1.9 | Informe Mensual N°3 - Julio/Agosto |  | 3d | 2017-08-08 A | 2017-08-10 A | 17SS+60d | 100% |  | 2017-08-08 | 2017-08-10 | 3d |  |  | Acevedo Risco Melannie Cecilia [10%]; De la Cruz Masías Alexander Romulo [30%]; Guzman Garay Fátima Fiorella [10%]; Herrera Abad Sonia [2%]; Quiñones Casas Duglas [2%] | 12.96h | 12.96h | 225 | 225 | 225 |
| 21 | 1.1.2.1.1.10 | Informe Mensual N°4 - Agosto/Setiembre |  | 3d | 2017-09-08 A | 2017-09-12 A | 17SS+82d | 100% |  | 2017-09-08 | 2017-09-12 | 3d |  |  | Acevedo Risco Melannie Cecilia [10%]; De la Cruz Masías Alexander Romulo [30%]; Guzman Garay Fátima Fiorella [10%]; Herrera Abad Sonia [2%]; Quiñones Casas Duglas [2%] | 12.96h | 12.96h | 225 | 225 | 225 |
| 22 | 1.1.2.1.1.11 | Informe Mensual N°5 - Setiembre/Octubre |  | 3d | 2017-10-10 | 2017-10-12 | 17SS+104d |  |  | 2017-10-10 | 2017-10-12 | 3d | 44d |  | Acevedo Risco Melannie Cecilia [10%]; De la Cruz Masías Alexander Romulo [30%]; Guzman Garay Fátima Fiorella [10%]; Herrera Abad Sonia [2%]; Quiñones Casas Duglas [2%] | 12.96h |  | 225 | 225 |  |
| 23 | 1.1.2.1.1.12 | Informe Mensual N°6 - Octubre/Noviembre |  | 3d | 2017-11-08 | 2017-11-10 | 17SS+124d |  |  | 2017-11-08 | 2017-11-10 | 3d | 24d |  | Acevedo Risco Melannie Cecilia [10%]; De la Cruz Masías Alexander Romulo [30%]; Guzman Garay Fátima Fiorella [10%]; Herrera Abad Sonia [2%]; Quiñones Casas Duglas [2%] | 12.96h |  | 225 | 225 |  |
| 24 | 1.1.2.1.1.13 | Informe Mensual N°7 - Noviembre |  | 3d | 2017-11-30 | 2017-12-04 | 17SS+140d |  |  | 2017-11-30 | 2017-12-04 | 3d | 8d |  | Acevedo Risco Melannie Cecilia [10%]; De la Cruz Masías Alexander Romulo [30%]; Guzman Garay Fátima Fiorella [10%]; Herrera Abad Sonia [2%]; Quiñones Casas Duglas [2%] | 12.96h |  | 225 | 225 |  |

| ID | WBS | Task | Duration | Start | Finish | Predecessors | Complete | Remaining | Baseline start | Baseline finish | Baseline duration | Total slack | Constraint | Resources | Work | Actual work | Cost | Baseline cost | Actual cost |
| --- | --- | --- | --- | --- | --- | --- | --- | --- | --- | --- | --- | --- | --- | --- | --- | --- | --- | --- | --- |
| 25 | 1.1.2.1.2 | **Servicio de Terceros - Analista de Sistemas** | 186d | 2017-03-06 A | 2017-11-30 |  | 79% | 38.93d | 2017-03-06 | 2017-11-30 | 186d | 10d |  |  | 207.84h | 168.96h | 3,975 | 3,975 | 3,165 |
| 26 | 1.1.2.1.2.1 | Contratación AS: CNV | 2d | 2017-03-06 A | 2017-03-07 A |  | 100% |  | 2017-03-06 | 2017-03-07 | 2d |  |  | Acevedo Risco Melannie Cecilia [10%]; Del Piélago Alva Marleny [30%]; Quiñones Casas Duglas [5%] | 7.2h | 7.2h |  |  |  |
| 27 | 1.1.2.1.2.2 | Inducción | 5d | 2017-03-08 A | 2017-03-14 A | 26 | 100% |  | 2017-03-08 | 2017-03-14 | 5d |  |  | Acevedo Risco Melannie Cecilia [10%]; Analista de AFCCTI [10%]; Del Piélago Alva Marleny [10%]; Descalzi Santos Luis Armando [10%]; Guzman Garay Fátima Fiorella [10%]; Neyra Villanueva Cesar | 60h | 60h | 1,500 | 1,500 | 1,500 |
| 28 | 1.1.2.1.2.3 | Informe Mensual N°1 - Marzo | 3d | 2017-04-05 A | 2017-04-07 A | 27SS+20d | 100% |  | 2017-04-05 | 2017-04-07 | 3d |  |  | Acevedo Risco Melannie Cecilia [10%]; Quiñones Casas Duglas [2%]; Neyra Villanueva Cesar [30%]; Tume Ledesma Waldir [2%]; Descalzi Santos Luis Armando [10%] | 12.96h | 12.96h | 270 | 270 | 270 |
| 29 | 1.1.2.1.2.4 | Informe Mensual N°2 - Abril | 3d | 2017-05-04 A | 2017-05-08 A | 27SS+38d | 100% |  | 2017-05-04 | 2017-05-08 | 3d |  |  | Acevedo Risco Melannie Cecilia [10%]; Quiñones Casas Duglas [2%]; Neyra Villanueva Cesar [30%]; Tume Ledesma Waldir [2%]; Descalzi Santos Luis Armando [10%] | 12.96h | 12.96h | 270 | 270 | 270 |
| 30 | 1.1.2.1.2.5 | Informe Mensual N°3 - Mayo | 3d | 2017-06-05 A | 2017-06-07 A | 27SS+60d | 100% |  | 2017-06-05 | 2017-06-07 | 3d |  |  | Acevedo Risco Melannie Cecilia [10%]; Quiñones Casas Duglas [2%]; Neyra Villanueva Cesar [30%]; Tume Ledesma Waldir [2%]; Descalzi Santos Luis Armando [10%] | 12.96h | 12.96h | 270 | 270 | 270 |
| 31 | 1.1.2.1.2.6 | Contratación AS: GMHA | 6d | 2017-06-08 A | 2017-06-15 A | 30 | 100% |  | 2017-06-08 | 2017-06-15 | 6d |  |  | Acevedo Risco Melannie Cecilia [10%]; Del Piélago Alva Marleny [15%]; Quiñones Casas Duglas [5%] | 14.4h | 14.4h |  |  |  |
| 32 | 1.1.2.1.2.7 | Inducción | 3d | 2017-06-16 A | 2017-06-20 A | 31 | 100% |  | 2017-06-16 | 2017-06-20 | 3d |  |  | Acevedo Risco Melannie Cecilia [10%]; Descalzi Santos Luis Armando [10%]; Guzman Garay Fátima Fiorella [10%]; De la Cruz Masías Alexander Romulo [30%] | 14.4h | 14.4h | 225 | 225 | 225 |
| 33 | 1.1.2.1.2.8 | Informe Mensual N°1 - Junio/Julio | 3d | 2017-07-13 A | 2017-07-17 A | 32SS+17d | 100% |  | 2017-07-13 | 2017-07-17 | 3d |  |  | Acevedo Risco Melannie Cecilia [10%]; Descalzi Santos Luis Armando [10%]; Quiñones Casas Duglas [2%]; Tume Ledesma Waldir [2%]; Huaraquispe Aranda Gerardo Manuel [30%] | 12.96h | 12.96h | 270 | 270 | 270 |
| 34 | 1.1.2.1.2.9 | Informe Mensual N°2 - Julio | 3d | 2017-07-26 A | 2017-07-31 A | 32SS+26d | 100% |  | 2017-07-26 | 2017-07-31 | 3d |  |  | Acevedo Risco Melannie Cecilia [10%]; Descalzi Santos Luis Armando [10%]; Quiñones Casas Duglas [2%]; Tume Ledesma Waldir [2%]; Huaraquispe Aranda Gerardo Manuel [20%] | 10.56h | 10.56h | 180 | 180 | 180 |
| 35 | 1.1.2.1.2.10 | Informe Mensual N°3 - Agosto | 3d | 2017-08-28 A | 2017-08-31 A | 34SS+22d | 100% |  | 2017-08-28 | 2017-08-31 | 3d |  |  | Acevedo Risco Melannie Cecilia [10%]; Descalzi Santos Luis Armando [10%]; Quiñones Casas Duglas [2%]; Tume Ledesma Waldir [2%]; Huaraquispe Aranda Gerardo Manuel [20%] | 10.56h | 10.56h | 180 | 180 | 180 |
| 36 | 1.1.2.1.2.11 | Informe Mensual N°4 - Setiembre | 3d | 2017-09-26 | 2017-09-28 | 34SS+42d |  |  | 2017-09-26 | 2017-09-28 | 3d | 54d |  | Acevedo Risco Melannie Cecilia [10%]; Descalzi Santos Luis Armando [10%]; Quiñones Casas Duglas [2%]; Tume Ledesma Waldir [2%]; Huaraquispe Aranda Gerardo Manuel [30%] | 12.96h |  | 270 | 270 |  |
| 37 | 1.1.2.1.2.12 | Informe Mensual N°5 - Octubre | 3d | 2017-10-26 | 2017-10-30 | 34SS+64d |  |  | 2017-10-26 | 2017-10-30 | 3d | 32d |  | Acevedo Risco Melannie Cecilia [10%]; Descalzi Santos Luis Armando [10%]; Quiñones Casas Duglas [2%]; Tume Ledesma Waldir [2%]; Huaraquispe Aranda Gerardo Manuel [30%] | 12.96h |  | 270 | 270 |  |
| 38 | 1.1.2.1.2.13 | Informe Mensual N°6 - Noviembre | 3d | 2017-11-28 | 2017-11-30 | 34SS+86d |  |  | 2017-11-28 | 2017-11-30 | 3d | 10d |  | Acevedo Risco Melannie Cecilia [10%]; Descalzi Santos Luis Armando [10%]; Quiñones Casas Duglas [2%]; Tume Ledesma Waldir [2%]; Huaraquispe Aranda Gerardo Manuel [30%] | 12.96h |  | 270 | 270 |  |
| 39 | 1.1.2.1.3 | **Servicio de terceros - Analista Programador 1** | 79d | 2017-04-05 A | 2017-08-01 A |  | 100% |  | 2017-04-05 | 2017-08-01 | 79d |  |  |  | 208.64h | 208.64h |  |  |  |
| 40 | 1.1.2.1.3.1 | Contratación AP1: CDCC | 2d | 2017-04-05 A | 2017-04-06 A |  | 100% |  | 2017-04-05 | 2017-04-06 | 2d |  | start no earlier than 2017-04-05 | Acevedo Risco Melannie Cecilia [10%]; Del Piélago Alva Marleny [15%]; Quiñones Casas Duglas [5%] | 4.8h | 4.8h |  |  |  |
| 41 | 1.1.2.1.3.2 | Inducción | 10d | 2017-04-07 A | 2017-04-24 A | 40 | 100% |  | 2017-04-07 | 2017-04-24 | 10d |  |  | Acevedo Risco Melannie Cecilia [10%]; Descalzi Santos Luis Armando [10%]; Guzman Garay Fátima Fiorella [10%]; Analista de AFCCTI [10%]; Del Piélago Alva Marleny [10%]; Castañeda Contreras Cristhofer David; Marquez Aylas Edgard [40%] | 152h | 152h |  |  |  |
| 42 | 1.1.2.1.3.3 | Informe Mensual N°1 - Abril | 3d | 2017-05-04 A | 2017-05-08 A | 41SS+16d | 100% |  | 2017-05-04 | 2017-05-08 | 3d |  |  | Acevedo Risco Melannie Cecilia [10%]; Descalzi Santos Luis Armando [10%]; Quiñones Casas Duglas [2%]; Tume Ledesma Waldir [2%]; Castañeda Contreras Cristhofer David [30%] | 12.96h | 12.96h |  |  |  |
| 43 | 1.1.2.1.3.4 | Informe Mensual N°2 - Mayo | 3d | 2017-05-30 A | 2017-06-01 A | 41SS+34d | 100% |  | 2017-05-30 | 2017-06-01 | 3d |  |  | Acevedo Risco Melannie Cecilia [10%]; Descalzi Santos Luis Armando [10%]; Quiñones Casas Duglas [2%]; Tume Ledesma Waldir [2%]; Castañeda Contreras Cristhofer David [30%] | 12.96h | 12.96h |  |  |  |
| 44 | 1.1.2.1.3.5 | Informe Mensual N°3 - Junio | 3d | 2017-06-27 A | 2017-07-03 A | 41SS+54d | 100% |  | 2017-06-27 | 2017-07-03 | 3d |  |  | Acevedo Risco Melannie Cecilia [10%]; Descalzi Santos Luis Armando [10%]; Quiñones Casas Duglas [2%]; Tume Ledesma Waldir [2%]; Castañeda Contreras Cristhofer David [30%] | 12.96h | 12.96h |  |  |  |
| 45 | 1.1.2.1.3.6 | Informe Mensual N°4 - Julio | 3d | 2017-07-27 A | 2017-08-01 A | 41SS+74d | 100% |  | 2017-07-27 | 2017-08-01 | 3d |  |  | Acevedo Risco Melannie Cecilia [10%]; Descalzi Santos Luis Armando [10%]; Quiñones Casas Duglas [2%]; Tume Ledesma Waldir [2%]; Castañeda Contreras Cristhofer David [30%] | 12.96h | 12.96h |  |  |  |
| 46 | 1.1.2.1.4 | **Servicio de terceros - Analista Programador 2** | 127d | 2017-06-14 A | 2017-12-15 |  | 67% | 42.33d | 2017-06-14 | 2017-12-15 | 127d | 0d |  |  | 287.12h | 259.04h | 7,070 | 7,070 | 6,620 |
| 47 | 1.1.2.1.4.1 | Contratación AP2: JBLM | 2d | 2017-06-14 A | 2017-06-15 A |  | 100% |  | 2017-06-14 | 2017-06-15 | 2d |  | start no earlier than 2017-06-14 | Acevedo Risco Melannie Cecilia [10%]; Del Piélago Alva Marleny [15%]; Quiñones Casas Duglas [5%] | 4.8h | 4.8h |  |  |  |
| 48 | 1.1.2.1.4.2 | Inducción | 7d | 2017-06-16 A | 2017-06-26 A | 47 | 100% |  | 2017-06-16 | 2017-06-26 | 7d |  |  | Descalzi Santos Luis Armando [30%]; Castañeda Contreras Cristhofer David [30%]; De la Cruz Masías Alexander Romulo [20%]; Fernandez Gargurevich Miguel; Huaraquispe Aranda Gerardo Manuel [20%]; Luna Vasquez Julio Bryan; Trebejo Loayza Waldo Jefferson | 224h | 224h | 6,020 | 6,020 | 6,020 |
| 49 | 1.1.2.1.4.3 | Informe Mensual N°1 - Junio/Julio | 3d | 2017-07-13 A | 2017-07-17 A | 48SS+17d | 100% |  | 2017-07-13 | 2017-07-17 | 3d |  |  | Acevedo Risco Melannie Cecilia [5%]; Descalzi Santos Luis Armando [10%]; Quiñones Casas Duglas [2%]; Tume Ledesma Waldir [2%]; Luna Vasquez Julio Bryan [30%] | 9.12h | 9.12h | 225 | 225 | 225 |
| 50 | 1.1.2.1.4.4 | Informe Mensual N°2 - Julio/Agosto | 3d | 2017-08-14 A | 2017-08-16 A | 48SS+38d | 100% |  | 2017-08-14 | 2017-08-16 | 3d |  |  | Acevedo Risco Melannie Cecilia [5%]; Descalzi Santos Luis Armando [10%]; Quiñones Casas Duglas [2%]; Tume Ledesma Waldir [2%]; Luna Vasquez Julio Bryan [30%] | 11.76h | 11.76h | 225 | 225 | 225 |
| 51 | 1.1.2.1.4.5 | Informe Mensual N°3 - Agosto/Setiembre | 3d | 2017-09-14 A | 2017-09-18 A | 48SS+60d | 100% |  | 2017-09-14 | 2017-09-18 | 3d |  |  | Acevedo Risco Melannie Cecilia [5%]; Descalzi Santos Luis Armando [10%]; Quiñones Casas Duglas [2%]; Tume Ledesma Waldir [2%]; Luna Vasquez Julio Bryan [20%] | 9.36h | 9.36h | 150 | 150 | 150 |
| 52 | 1.1.2.1.4.6 | Informe Mensual N°4 - Setiembre/Octubre | 3d | 2017-10-12 | 2017-10-16 | 48SS+80d |  |  | 2017-10-12 | 2017-10-16 | 3d | 42d |  | Acevedo Risco Melannie Cecilia [5%]; Descalzi Santos Luis Armando [10%]; Quiñones Casas Duglas [2%]; Tume Ledesma Waldir [2%]; Luna Vasquez Julio Bryan [20%] | 9.36h |  | 150 | 150 |  |
| 53 | 1.1.2.1.4.7 | Informe Mensual N°5 - Octubre/Noviembre | 3d | 2017-11-14 | 2017-11-16 | 48SS+102d |  |  | 2017-11-14 | 2017-11-16 | 3d | 20d |  | Acevedo Risco Melannie Cecilia [5%]; Descalzi Santos Luis Armando [10%]; Quiñones Casas Duglas [2%]; Tume Ledesma Waldir [2%]; Luna Vasquez Julio Bryan [20%] | 9.36h |  | 150 | 150 |  |
| 54 | 1.1.2.1.4.8 | Informe Mensual N°6 - Noviembre/Diciembre | 3d | 2017-12-13 | 2017-12-15 | 48SS+122d |  |  | 2017-12-13 | 2017-12-15 | 3d | 0d |  | Acevedo Risco Melannie Cecilia [5%]; Descalzi Santos Luis Armando [10%]; Quiñones Casas Duglas [2%]; Tume Ledesma Waldir [2%]; Luna Vasquez Julio Bryan [20%] | 9.36h |  | 150 | 150 |  |

| ID | WBS | Task | Duration | Start | Finish | Predecessors | Complete | Remaining | Baseline start | Baseline finish | Baseline duration | Total slack | Constraint | Resources | Work | Actual work | Cost | Baseline cost | Actual cost |
| --- | --- | --- | --- | --- | --- | --- | --- | --- | --- | --- | --- | --- | --- | --- | --- | --- | --- | --- | --- |
| 55 | 1.1.2.1.5 | **Servicio de terceros - Analista Programador 3** | 53d | 2017-06-14 A | 2017-08-31 A |  | 100% |  | 2017-06-14 | 2017-08-31 | 53d |  |  |  | 30.24h | 30.24h | 450 | 450 | 450 |
| 56 | 1.1.2.1.5.1 | Contratación AP3: WJTL | 2d | 2017-06-14 A | 2017-06-15 A | 47SS | 100% |  | 2017-06-14 | 2017-06-15 | 2d |  |  | Acevedo Risco Melannie Cecilia [10%]; Del Piélago Alva Marleny [15%]; Quiñones Casas Duglas [5%] | 4.8h | 4.8h |  |  |  |
| 57 | 1.1.2.1.5.2 | Informe Mensual N°1 - Junio/Julio | 3d | 2017-07-13 A | 2017-07-17 A | 48SS+17d | 100% |  | 2017-07-13 | 2017-07-17 | 3d |  |  | Acevedo Risco Melannie Cecilia [5%]; Descalzi Santos Luis Armando [10%]; Quiñones Casas Duglas [2%]; Tume Ledesma Waldir [2%]; Trebejo Loayza Waldo Jefferson [20%] | 6.72h | 6.72h | 150 | 150 | 150 |
| 58 | 1.1.2.1.5.3 | Informe Mensual N°2 - Julio/Agosto | 3d | 2017-08-14 A | 2017-08-16 A | 48SS+38d | 100% |  | 2017-08-14 | 2017-08-16 | 3d |  |  | Acevedo Risco Melannie Cecilia [5%]; Descalzi Santos Luis Armando [10%]; Quiñones Casas Duglas [2%]; Tume Ledesma Waldir [2%]; Trebejo Loayza Waldo Jefferson [20%] | 9.36h | 9.36h | 150 | 150 | 150 |
| 59 | 1.1.2.1.5.4 | Informe Mensual N°3 - Agosto | 3d | 2017-08-28 A | 2017-08-31 A | 48SS+48d | 100% |  | 2017-08-28 | 2017-08-31 | 3d |  |  | Acevedo Risco Melannie Cecilia [5%]; Descalzi Santos Luis Armando [10%]; Quiñones Casas Duglas [2%]; Tume Ledesma Waldir [2%]; Trebejo Loayza Waldo Jefferson [20%] | 9.36h | 9.36h | 150 | 150 | 150 |
| 60 | 1.1.2.1.6 | **Servicio de terceros - Analista Programador 4** | 53d | 2017-06-14 A | 2017-08-31 A |  | 100% |  | 2017-06-14 | 2017-08-31 | 53d |  |  |  | 37.44h | 37.44h | 675 | 675 | 675 |
| 61 | 1.1.2.1.6.1 | Contratación AP4: MAFG | 2d | 2017-06-14 A | 2017-06-15 A | 47SS | 100% |  | 2017-06-14 | 2017-06-15 | 2d |  |  | Acevedo Risco Melannie Cecilia [10%]; Del Piélago Alva Marleny [15%]; Quiñones Casas Duglas [5%] | 4.8h | 4.8h |  |  |  |
| 62 | 1.1.2.1.6.2 | Informe Mensual N°1 - Junio/Julio | 3d | 2017-07-13 A | 2017-07-17 A | 48SS+17d | 100% |  | 2017-07-13 | 2017-07-17 | 3d |  |  | Acevedo Risco Melannie Cecilia [5%]; Descalzi Santos Luis Armando [10%]; Quiñones Casas Duglas [2%]; Tume Ledesma Waldir [2%]; Fernandez Gargurevich Miguel [30%] | 9.12h | 9.12h | 225 | 225 | 225 |
| 63 | 1.1.2.1.6.3 | Informe Mensual N°2 - Julio/Agosto | 3d | 2017-08-14 A | 2017-08-16 A | 48SS+38d | 100% |  | 2017-08-14 | 2017-08-16 | 3d |  |  | Acevedo Risco Melannie Cecilia [5%]; Descalzi Santos Luis Armando [10%]; Quiñones Casas Duglas [2%]; Tume Ledesma Waldir [2%]; Fernandez Gargurevich Miguel [30%] | 11.76h | 11.76h | 225 | 225 | 225 |
| 64 | 1.1.2.1.6.4 | Informe Mensual N°3 - Agosto | 3d | 2017-08-28 A | 2017-08-31 A | 48SS+48d | 100% |  | 2017-08-28 | 2017-08-31 | 3d |  |  | Acevedo Risco Melannie Cecilia [5%]; Descalzi Santos Luis Armando [10%]; Quiñones Casas Duglas [2%]; Tume Ledesma Waldir [2%]; Fernandez Gargurevich Miguel [30%] | 11.76h | 11.76h | 225 | 225 | 225 |
| 65 | 1.1.2.1.7 | **Servicio de terceros - Analista Programador 5** | 109d | 2017-07-03 A | 2017-12-05 |  | 57% | 46.71d | 2017-07-03 | 2017-12-05 | 109d | 7d |  |  | 58.56h | 30.48h | 990 | 990 | 540 |
| 66 | 1.1.2.1.7.1 | Contratación AP5: EPLC | 2d | 2017-07-03 A | 2017-07-04 A |  | 100% |  | 2017-07-03 | 2017-07-04 | 2d |  | start no earlier than 2017-07-03 | Acevedo Risco Melannie Cecilia [10%]; Del Piélago Alva Marleny [15%]; Quiñones Casas Duglas [5%] | 4.8h | 4.8h |  |  |  |
| 67 | 1.1.2.1.7.2 | Inducción | 4d | 2017-07-05 A | 2017-07-10 A | 66 | 100% |  | 2017-07-05 | 2017-07-10 | 4d |  |  | Descalzi Santos Luis Armando [20%]; Huaraquispe Aranda Gerardo Manuel [20%] | 9.6h | 9.6h | 240 | 240 | 240 |
| 68 | 1.1.2.1.7.3 | Informe Mensual N°1 - Julio | 3d | 2017-08-01 A | 2017-08-03 A | 67SS+18d | 100% |  | 2017-08-01 | 2017-08-03 | 3d |  |  | Acevedo Risco Melannie Cecilia [5%]; Descalzi Santos Luis Armando [10%]; Quiñones Casas Duglas [2%]; Tume Ledesma Waldir [2%]; López Cárdenas Edward Pavel [20%] | 6.72h | 6.72h | 150 | 150 | 150 |
| 69 | 1.1.2.1.7.4 | Informe Mensual N°1 - Agosto | 3d | 2017-08-29 A | 2017-09-01 A | 67SS+38d | 100% |  | 2017-08-29 | 2017-09-01 | 3d |  |  | Acevedo Risco Melannie Cecilia [5%]; Descalzi Santos Luis Armando [10%]; Quiñones Casas Duglas [2%]; Tume Ledesma Waldir [2%]; López Cárdenas Edward Pavel [20%] | 9.36h | 9.36h | 150 | 150 | 150 |
| 70 | 1.1.2.1.7.5 | Informe Mensual N°1 - Setiembre | 3d | 2017-09-29 | 2017-10-03 | 67SS+60d |  |  | 2017-09-29 | 2017-10-03 | 3d | 51d |  | Acevedo Risco Melannie Cecilia [5%]; Descalzi Santos Luis Armando [10%]; Quiñones Casas Duglas [2%]; Tume Ledesma Waldir [2%]; López Cárdenas Edward Pavel [20%] | 9.36h |  | 150 | 150 |  |
| 71 | 1.1.2.1.7.6 | Informe Mensual N°2 - Octubre | 3d | 2017-10-31 | 2017-11-03 | 67SS+82d |  |  | 2017-10-31 | 2017-11-03 | 3d | 29d |  | Acevedo Risco Melannie Cecilia [5%]; Descalzi Santos Luis Armando [10%]; Quiñones Casas Duglas [2%]; Tume Ledesma Waldir [2%]; López Cárdenas Edward Pavel [20%] | 9.36h |  | 150 | 150 |  |
| 72 | 1.1.2.1.7.7 | Informe Mensual N°3 - Noviembre | 3d | 2017-12-01 | 2017-12-05 | 67SS+104d |  |  | 2017-12-01 | 2017-12-05 | 3d | 7d |  | Acevedo Risco Melannie Cecilia [5%]; Descalzi Santos Luis Armando [10%]; Quiñones Casas Duglas [2%]; Tume Ledesma Waldir [2%]; López Cárdenas Edward Pavel [20%] | 9.36h |  | 150 | 150 |  |
| 73 | 1.1.3 | **Seguimiento y Control** | 146d | 2017-05-05 A | 2017-12-01 |  | 53% | 68.8d | 2017-05-05 | 2017-12-01 | 146d | 9d |  |  | 123.1h | 69.6h | 314.06 | 314.06 | 210.94 |
| 74 | 1.1.3.1 | **Informe Mensual** | 110d | 2017-06-26 A | 2017-12-01 |  | 50% | 55d | 2017-06-26 | 2017-12-01 | 110d | 9d |  |  | 100h | 54h |  |  |  |
| 75 | 1.1.3.1.1 | Informe Mensual - junio | 5d | 2017-06-26 A | 2017-07-04 A |  | 100% |  | 2017-06-26 | 2017-07-04 | 5d |  | start no earlier than 2017-06-26 | Acevedo Risco Melannie Cecilia [40%]; Quiñones Casas Duglas [5%] | 18h | 18h |  |  |  |
| 76 | 1.1.3.1.2 | Informe Mensual - julio | 5d | 2017-07-26 A | 2017-08-02 A |  | 100% |  | 2017-07-26 | 2017-08-02 | 5d |  | start no earlier than 2017-07-26 | Acevedo Risco Melannie Cecilia [40%]; Quiñones Casas Duglas [5%] | 18h | 18h |  |  |  |
| 77 | 1.1.3.1.3 | Informe Mensual - agosto | 5d | 2017-08-28 A | 2017-09-04 A |  | 100% |  | 2017-08-28 | 2017-09-04 | 5d |  | start no earlier than 2017-08-26 | Acevedo Risco Melannie Cecilia [40%]; Quiñones Casas Duglas [5%] | 18h | 18h |  |  |  |
| 78 | 1.1.3.1.4 | Informe Mensual - setiembre | 5d | 2017-09-26 | 2017-10-02 |  |  |  | 2017-09-26 | 2017-10-02 | 5d | 52d | start no earlier than 2017-09-26 | Acevedo Risco Melannie Cecilia [40%]; Quiñones Casas Duglas [5%] | 18h |  |  |  |  |
| 79 | 1.1.3.1.5 | Informe Mensual - octubre | 5d | 2017-10-26 | 2017-11-02 |  |  |  | 2017-10-26 | 2017-11-02 | 5d | 30d | start no earlier than 2017-10-26 | Acevedo Risco Melannie Cecilia [40%]; Quiñones Casas Duglas [5%] | 18h |  |  |  |  |
| 80 | 1.1.3.1.6 | Informe Mensual - noviembre | 5d | 2017-11-27 | 2017-12-01 |  |  |  | 2017-11-27 | 2017-12-01 | 5d | 9d | start no earlier than 2017-11-26 | Acevedo Risco Melannie Cecilia [20%]; Quiñones Casas Duglas [5%] | 10h |  |  |  |  |

| ID | WBS | Task | Duration | Start | Finish | Complete | Remaining | Baseline start | Baseline finish | Baseline duration | Total slack | Constraint | Resources | Work | Actual work | Cost | Baseline cost | Actual cost |
| --- | --- | --- | --- | --- | --- | --- | --- | --- | --- | --- | --- | --- | --- | --- | --- | --- | --- | --- |
| 81 | 1.1.3.2 | **Reunión de Estado Semanal** | 145.19d | 2017-05-05 A | 2017-12-01 | 68% | 46.83d | 2017-05-05 | 2017-12-01 | 145.19d | 9.81d |  |  | 23.1h | 15.6h | 314.06 | 314.06 | 210.94 |
| 82 | 1.1.3.2.1 | Reunión de Estado - Semana 1 | 1.5h | 2017-05-05 A | 2017-05-05 A | 100% |  | 2017-05-05 | 2017-05-05 | 1.5h |  | start no earlier than 2017-05-05 | Acevedo Risco Melannie Cecilia [10%]; Apaza Aranda Oliver [10%]; Descalzi Santos Luis Armando [10%]; Guzman Garay Fátima Fiorella [10%]; Neyra Villanueva Cesar [10%] | 0.75h | 0.75h | 10.31 | 10.31 | 10.31 |
| 83 | 1.1.3.2.2 | Reunión de Estado - Semana 2 | 1.5h | 2017-05-12 A | 2017-05-12 A | 100% |  | 2017-05-12 | 2017-05-12 | 1.5h |  | start no earlier than 2017-05-12 | Acevedo Risco Melannie Cecilia [10%]; Descalzi Santos Luis Armando [10%]; Guzman Garay Fátima Fiorella [10%]; Neyra Villanueva Cesar [10%]; De la Cruz Masías Alexander Romulo [10%] | 0.75h | 0.75h | 10.31 | 10.31 | 10.31 |
| 84 | 1.1.3.2.3 | Reunión de Estado - Semana 3 | 1.5h | 2017-05-19 A | 2017-05-19 A | 100% |  | 2017-05-19 | 2017-05-19 | 1.5h |  | start no earlier than 2017-05-19 | Acevedo Risco Melannie Cecilia [10%]; Descalzi Santos Luis Armando [10%]; Guzman Garay Fátima Fiorella [10%]; Neyra Villanueva Cesar [10%]; De la Cruz Masías Alexander Romulo [10%] | 0.75h | 0.75h | 10.31 | 10.31 | 10.31 |
| 85 | 1.1.3.2.4 | Reunión de Estado - Semana 4 | 1.5h | 2017-05-26 A | 2017-05-26 A | 100% |  | 2017-05-26 | 2017-05-26 | 1.5h |  | start no earlier than 2017-05-26 | Acevedo Risco Melannie Cecilia [10%]; Descalzi Santos Luis Armando [10%]; Guzman Garay Fátima Fiorella [10%]; Neyra Villanueva Cesar [10%]; De la Cruz Masías Alexander Romulo [10%] | 0.75h | 0.75h | 10.31 | 10.31 | 10.31 |
| 86 | 1.1.3.2.5 | Reunión de Estado - Semana 5 | 1.5h | 2017-06-02 A | 2017-06-02 A | 100% |  | 2017-06-02 | 2017-06-02 | 1.5h |  | start no earlier than 2017-06-02 | Acevedo Risco Melannie Cecilia [10%]; Descalzi Santos Luis Armando [10%]; Guzman Garay Fátima Fiorella [10%]; Neyra Villanueva Cesar [10%]; De la Cruz Masías Alexander Romulo [10%] | 0.75h | 0.75h | 10.31 | 10.31 | 10.31 |
| 87 | 1.1.3.2.6 | Reunión de Estado - Semana 6 | 1.5h | 2017-06-09 A | 2017-06-09 A | 100% |  | 2017-06-09 | 2017-06-09 | 1.5h |  | start no earlier than 2017-06-09 | Acevedo Risco Melannie Cecilia [10%]; Descalzi Santos Luis Armando [10%]; Guzman Garay Fátima Fiorella [10%]; De la Cruz Masías Alexander Romulo [10%] | 0.6h | 0.6h | 4.69 | 4.69 | 4.69 |
| 88 | 1.1.3.2.7 | Reunión de Estado - Semana 7 | 1.5h | 2017-06-16 A | 2017-06-16 A | 100% |  | 2017-06-16 | 2017-06-16 | 1.5h |  | start no earlier than 2017-06-16 | Acevedo Risco Melannie Cecilia [10%]; Descalzi Santos Luis Armando [10%]; Guzman Garay Fátima Fiorella [10%]; De la Cruz Masías Alexander Romulo [10%]; Huaraquispe Aranda Gerardo Manuel [10%] | 0.75h | 0.75h | 10.31 | 10.31 | 10.31 |
| 89 | 1.1.3.2.8 | Reunión de Estado - Semana 8 | 1.5h | 2017-06-23 A | 2017-06-23 A | 100% |  | 2017-06-23 | 2017-06-23 | 1.5h |  | start no earlier than 2017-06-23 | Acevedo Risco Melannie Cecilia [10%]; Descalzi Santos Luis Armando [10%]; Guzman Garay Fátima Fiorella [10%]; De la Cruz Masías Alexander Romulo [10%]; Huaraquispe Aranda Gerardo Manuel [10%] | 0.75h | 0.75h | 10.31 | 10.31 | 10.31 |
| 90 | 1.1.3.2.9 | Reunión de Estado - Semana 9 | 1.5h | 2017-07-03 A | 2017-07-03 A | 100% |  | 2017-07-03 | 2017-07-03 | 1.5h |  | start no earlier than 2017-06-30 | Acevedo Risco Melannie Cecilia [10%]; Descalzi Santos Luis Armando [10%]; Guzman Garay Fátima Fiorella [10%]; De la Cruz Masías Alexander Romulo [10%]; Huaraquispe Aranda Gerardo Manuel [10%] | 0.75h | 0.75h | 10.31 | 10.31 | 10.31 |
| 91 | 1.1.3.2.10 | Reunión de Estado - Semana 10 | 1.5h | 2017-07-07 A | 2017-07-07 A | 100% |  | 2017-07-07 | 2017-07-07 | 1.5h |  | start no earlier than 2017-07-07 | Acevedo Risco Melannie Cecilia [10%]; Descalzi Santos Luis Armando [10%]; Guzman Garay Fátima Fiorella [10%]; De la Cruz Masías Alexander Romulo [10%]; Huaraquispe Aranda Gerardo Manuel [10%] | 0.75h | 0.75h | 10.31 | 10.31 | 10.31 |
| 92 | 1.1.3.2.11 | Reunión de Estado - Semana 11 | 1.5h | 2017-07-14 A | 2017-07-14 A | 100% |  | 2017-07-14 | 2017-07-14 | 1.5h |  | start no earlier than 2017-07-14 | Acevedo Risco Melannie Cecilia [10%]; Descalzi Santos Luis Armando [10%]; Guzman Garay Fátima Fiorella [10%]; De la Cruz Masías Alexander Romulo [10%]; Huaraquispe Aranda Gerardo Manuel [10%] | 0.75h | 0.75h | 10.31 | 10.31 | 10.31 |
| 93 | 1.1.3.2.12 | Reunión de Estado - Semana 12 | 1.5h | 2017-07-21 A | 2017-07-21 A | 100% |  | 2017-07-21 | 2017-07-21 | 1.5h |  | start no earlier than 2017-07-21 | Acevedo Risco Melannie Cecilia [10%]; Descalzi Santos Luis Armando [10%]; Guzman Garay Fátima Fiorella [10%]; De la Cruz Masías Alexander Romulo [10%]; Huaraquispe Aranda Gerardo Manuel [10%] | 0.75h | 0.75h | 10.31 | 10.31 | 10.31 |
| 94 | 1.1.3.2.13 | Reunión de Estado - Semana 13 | 1.5h | 2017-07-31 A | 2017-07-31 A | 100% |  | 2017-07-31 | 2017-07-31 | 1.5h |  | start no earlier than 2017-07-28 | Acevedo Risco Melannie Cecilia [10%]; Descalzi Santos Luis Armando [10%]; Guzman Garay Fátima Fiorella [10%]; De la Cruz Masías Alexander Romulo [10%]; Huaraquispe Aranda Gerardo Manuel [10%] | 0.75h | 0.75h | 10.31 | 10.31 | 10.31 |
| 95 | 1.1.3.2.14 | Reunión de Estado - Semana 14 | 1.5h | 2017-08-04 A | 2017-08-04 A | 100% |  | 2017-08-04 | 2017-08-04 | 1.5h |  | start no earlier than 2017-08-04 | Acevedo Risco Melannie Cecilia [10%]; Descalzi Santos Luis Armando [10%]; Guzman Garay Fátima Fiorella [10%]; De la Cruz Masías Alexander Romulo [10%]; Huaraquispe Aranda Gerardo Manuel [10%] | 0.75h | 0.75h | 10.31 | 10.31 | 10.31 |
| 96 | 1.1.3.2.15 | Reunión de Estado - Semana 15 | 1.5h | 2017-08-11 A | 2017-08-11 A | 100% |  | 2017-08-11 | 2017-08-11 | 1.5h |  | start no earlier than 2017-08-11 | Acevedo Risco Melannie Cecilia [10%]; Descalzi Santos Luis Armando [10%]; Guzman Garay Fátima Fiorella [10%]; De la Cruz Masías Alexander Romulo [10%]; Huaraquispe Aranda Gerardo Manuel [10%] | 0.75h | 0.75h | 10.31 | 10.31 | 10.31 |
| 97 | 1.1.3.2.16 | Reunión de Estado - Semana 16 | 1.5h | 2017-08-18 A | 2017-08-18 A | 100% |  | 2017-08-18 | 2017-08-18 | 1.5h |  | start no earlier than 2017-08-18 | Acevedo Risco Melannie Cecilia [10%]; Descalzi Santos Luis Armando [10%]; Guzman Garay Fátima Fiorella [10%]; De la Cruz Masías Alexander Romulo [10%]; Huaraquispe Aranda Gerardo Manuel [10%] | 0.75h | 0.75h | 10.31 | 10.31 | 10.31 |
| 98 | 1.1.3.2.17 | Reunión de Estado - Semana 17 | 1.5h | 2017-08-25 A | 2017-08-25 A | 100% |  | 2017-08-25 | 2017-08-25 | 1.5h |  | start no earlier than 2017-08-25 | Acevedo Risco Melannie Cecilia [10%]; Descalzi Santos Luis Armando [10%]; Guzman Garay Fátima Fiorella [10%]; De la Cruz Masías Alexander Romulo [10%]; Huaraquispe Aranda Gerardo Manuel [10%] | 0.75h | 0.75h | 10.31 | 10.31 | 10.31 |
| 99 | 1.1.3.2.18 | Reunión de Estado - Semana 18 | 1.5h | 2017-09-01 A | 2017-09-01 A | 100% |  | 2017-09-01 | 2017-09-01 | 1.5h |  | start no earlier than 2017-09-01 | Acevedo Risco Melannie Cecilia [10%]; Descalzi Santos Luis Armando [10%]; Guzman Garay Fátima Fiorella [10%]; De la Cruz Masías Alexander Romulo [10%]; Huaraquispe Aranda Gerardo Manuel [10%] | 0.75h | 0.75h | 10.31 | 10.31 | 10.31 |
| 100 | 1.1.3.2.19 | Reunión de Estado - Semana 19 | 1.5h | 2017-09-08 A | 2017-09-08 A | 100% |  | 2017-09-08 | 2017-09-08 | 1.5h |  | start no earlier than 2017-09-08 | Acevedo Risco Melannie Cecilia [10%]; Descalzi Santos Luis Armando [10%]; Guzman Garay Fátima Fiorella [10%]; De la Cruz Masías Alexander Romulo [10%]; Huaraquispe Aranda Gerardo Manuel [10%] | 0.75h | 0.75h | 10.31 | 10.31 | 10.31 |
| 101 | 1.1.3.2.20 | Reunión de Estado - Semana 20 | 1.5h | 2017-09-15 A | 2017-09-15 A | 100% |  | 2017-09-15 | 2017-09-15 | 1.5h |  | start no earlier than 2017-09-15 | Acevedo Risco Melannie Cecilia [10%]; Descalzi Santos Luis Armando [10%]; Guzman Garay Fátima Fiorella [10%]; De la Cruz Masías Alexander Romulo [10%]; Huaraquispe Aranda Gerardo Manuel [10%] | 0.75h | 0.75h | 10.31 | 10.31 | 10.31 |
| 102 | 1.1.3.2.21 | Reunión de Estado - Semana 21 | 1.5h | 2017-09-22 A | 2017-09-22 A | 100% |  | 2017-09-22 | 2017-09-22 | 1.5h |  | start no earlier than 2017-09-22 | Acevedo Risco Melannie Cecilia [10%]; Descalzi Santos Luis Armando [10%]; Guzman Garay Fátima Fiorella [10%]; De la Cruz Masías Alexander Romulo [10%]; Huaraquispe Aranda Gerardo Manuel [10%] | 0.75h | 0.75h | 10.31 | 10.31 | 10.31 |
| 103 | 1.1.3.2.22 | Reunión de Estado - Semana 22 | 1.5h | 2017-09-29 | 2017-09-29 |  |  | 2017-09-29 | 2017-09-29 | 1.5h | 53.81d | start no earlier than 2017-09-29 | Acevedo Risco Melannie Cecilia [10%]; Descalzi Santos Luis Armando [10%]; Guzman Garay Fátima Fiorella [10%]; De la Cruz Masías Alexander Romulo [10%]; Huaraquispe Aranda Gerardo Manuel [10%] | 0.75h |  | 10.31 | 10.31 |  |
| 104 | 1.1.3.2.23 | Reunión de Estado - Semana 23 | 1.5h | 2017-10-06 | 2017-10-06 |  |  | 2017-10-06 | 2017-10-06 | 1.5h | 48.81d | start no earlier than 2017-10-06 | Acevedo Risco Melannie Cecilia [10%]; Descalzi Santos Luis Armando [10%]; Guzman Garay Fátima Fiorella [10%]; De la Cruz Masías Alexander Romulo [10%]; Huaraquispe Aranda Gerardo Manuel [10%] | 0.75h |  | 10.31 | 10.31 |  |
| 105 | 1.1.3.2.24 | Reunión de Estado - Semana 24 | 1.5h | 2017-10-13 | 2017-10-13 |  |  | 2017-10-13 | 2017-10-13 | 1.5h | 43.81d | start no earlier than 2017-10-13 | Acevedo Risco Melannie Cecilia [10%]; Descalzi Santos Luis Armando [10%]; Guzman Garay Fátima Fiorella [10%]; De la Cruz Masías Alexander Romulo [10%]; Huaraquispe Aranda Gerardo Manuel [10%] | 0.75h |  | 10.31 | 10.31 |  |
| 106 | 1.1.3.2.25 | Reunión de Estado - Semana 25 | 1.5h | 2017-10-20 | 2017-10-20 |  |  | 2017-10-20 | 2017-10-20 | 1.5h | 38.81d | start no earlier than 2017-10-20 | Acevedo Risco Melannie Cecilia [10%]; Descalzi Santos Luis Armando [10%]; Guzman Garay Fátima Fiorella [10%]; De la Cruz Masías Alexander Romulo [10%]; Huaraquispe Aranda Gerardo Manuel [10%] | 0.75h |  | 10.31 | 10.31 |  |
| 107 | 1.1.3.2.26 | Reunión de Estado - Semana 26 | 1.5h | 2017-10-27 | 2017-10-27 |  |  | 2017-10-27 | 2017-10-27 | 1.5h | 33.81d | start no earlier than 2017-10-27 | Acevedo Risco Melannie Cecilia [10%]; Descalzi Santos Luis Armando [10%]; Guzman Garay Fátima Fiorella [10%]; De la Cruz Masías Alexander Romulo [10%]; Huaraquispe Aranda Gerardo Manuel [10%] | 0.75h |  | 10.31 | 10.31 |  |
| 108 | 1.1.3.2.27 | Reunión de Estado - Semana 27 | 1.5h | 2017-11-03 | 2017-11-03 |  |  | 2017-11-03 | 2017-11-03 | 1.5h | 29.81d | start no earlier than 2017-11-03 | Acevedo Risco Melannie Cecilia [10%]; Descalzi Santos Luis Armando [10%]; Guzman Garay Fátima Fiorella [10%]; De la Cruz Masías Alexander Romulo [10%]; Huaraquispe Aranda Gerardo Manuel [10%] | 0.75h |  | 10.31 | 10.31 |  |
| 109 | 1.1.3.2.28 | Reunión de Estado - Semana 28 | 1.5h | 2017-11-10 | 2017-11-10 |  |  | 2017-11-10 | 2017-11-10 | 1.5h | 24.81d | start no earlier than 2017-11-10 | Acevedo Risco Melannie Cecilia [10%]; Descalzi Santos Luis Armando [10%]; Guzman Garay Fátima Fiorella [10%]; De la Cruz Masías Alexander Romulo [10%]; Huaraquispe Aranda Gerardo Manuel [10%] | 0.75h |  | 10.31 | 10.31 |  |
| 110 | 1.1.3.2.29 | Reunión de Estado - Semana 29 | 1.5h | 2017-11-17 | 2017-11-17 |  |  | 2017-11-17 | 2017-11-17 | 1.5h | 19.81d | start no earlier than 2017-11-17 | Acevedo Risco Melannie Cecilia [10%]; Descalzi Santos Luis Armando [10%]; Guzman Garay Fátima Fiorella [10%]; De la Cruz Masías Alexander Romulo [10%]; Huaraquispe Aranda Gerardo Manuel [10%] | 0.75h |  | 10.31 | 10.31 |  |
| 111 | 1.1.3.2.30 | Reunión de Estado - Semana 30 | 1.5h | 2017-11-24 | 2017-11-24 |  |  | 2017-11-24 | 2017-11-24 | 1.5h | 14.81d | start no earlier than 2017-11-24 | Acevedo Risco Melannie Cecilia [10%]; Descalzi Santos Luis Armando [10%]; Guzman Garay Fátima Fiorella [10%]; De la Cruz Masías Alexander Romulo [10%]; Huaraquispe Aranda Gerardo Manuel [10%] | 0.75h |  | 10.31 | 10.31 |  |
| 112 | 1.1.3.2.31 | Reunión de Estado - Semana 31 | 1.5h | 2017-12-01 | 2017-12-01 |  |  | 2017-12-01 | 2017-12-01 | 1.5h | 9.81d | start no earlier than 2017-12-01 | Acevedo Risco Melannie Cecilia [10%]; Descalzi Santos Luis Armando [10%]; Guzman Garay Fátima Fiorella [10%]; De la Cruz Masías Alexander Romulo [10%]; Huaraquispe Aranda Gerardo Manuel [10%] | 0.75h |  | 10.31 | 10.31 |  |

| ID | WBS | Task | Type | Duration | Start | Finish | Predecessors | Complete | Remaining | Baseline start | Baseline finish | Baseline duration | Total slack | Free slack | Constraint | Resources | Work | Actual work | Cost | Baseline cost | Actual cost |
| --- | --- | --- | --- | --- | --- | --- | --- | --- | --- | --- | --- | --- | --- | --- | --- | --- | --- | --- | --- | --- | --- |
| 113 | 1.1.4 | **Cierre** |  | 5d | 2017-11-30 | 2017-12-07 |  |  |  | 2017-11-30 | 2017-12-07 | 5d | 5.5d |  |  |  | 18h |  |  |  |  |
| 114 | 1.1.4.1 | Elaboración de informe de Cierre |  | 5d | 2017-11-30 | 2017-12-07 | 269 |  |  | 2017-11-30 | 2017-12-07 | 5d | 5.5d | 0d |  | Acevedo Risco Melannie Cecilia [40%]; Quiñones Casas Duglas [5%] | 18h |  |  |  |  |
| 115 | 1.1.4.2 | Informe de Cierre | milestone | 0d | 2017-12-07 | 2017-12-07 | 114 |  |  | 2017-12-07 | 2017-12-07 |  | 5.5d |  |  |  |  |  |  |  |  |
| 116 | 1.2 | **Actividades de Ingeniería** |  | 179d | 2017-03-15 A | 2017-11-30 |  | 72% | 49.99d | 2017-03-15 | 2017-11-30 | 179d | 10d |  |  |  | 2854.95h | 2102.35h | 71,448.12 | 70,700 | 48,967.5 |
| 117 | 1.2.1 | **Planificación** |  | 43.38d | 2017-03-15 A | 2017-05-18 A |  | 100% |  | 2017-03-15 | 2017-05-18 | 43.38d |  |  |  |  | 397.15h | 397.15h | 9,130 | 9,130 | 9,130 |
| 118 | 1.2.1.1 | Elaboración de Ficha de Relevamiento v1.0 |  | 22d | 2017-03-15 A | 2017-04-17 A | 13 | 100% |  | 2017-03-15 | 2017-04-17 | 22d |  |  |  | Acevedo Risco Melannie Cecilia [10%]; Apaza Aranda Oliver [70%]; Descalzi Santos Luis Armando [10%]; Guzman Garay Fátima Fiorella [10%]; Neyra Villanueva Cesar [70%] | 299.2h | 299.2h | 8,470 | 8,470 | 8,470 |
| 119 | 1.2.1.2 | Revisión Ficha de Relevamiento v 1.0 |  | 6d | 2017-04-18 A | 2017-04-25 A | 118 | 100% |  | 2017-04-18 | 2017-04-25 | 6d |  |  |  | Acevedo Risco Melannie Cecilia [10%]; Apaza Aranda Oliver [20%]; Descalzi Santos Luis Armando [10%]; Guzman Garay Fátima Fiorella [10%]; Neyra Villanueva Cesar [20%]; Calderon Valenzuela Wilfredo [20%] | 43.2h | 43.2h | 660 | 660 | 660 |
| 120 | 1.2.1.3 | Elaboración de Ficha de Relevamiento v2.0 |  | 5d | 2017-05-09 A | 2017-05-15 A | 15 | 100% |  | 2017-05-09 | 2017-05-15 | 5d |  |  |  | Acevedo Risco Melannie Cecilia [30%]; Descalzi Santos Luis Armando [30%]; Guzman Garay Fátima Fiorella [40%] | 40h | 40h |  |  |  |
| 121 | 1.2.1.4 | Revisión Ficha de Relevamiento v 2.0 |  | 2d | 2017-05-16 A | 2017-05-17 A | 120 | 100% |  | 2017-05-16 | 2017-05-17 | 2d |  |  |  | Guzman Garay Fátima Fiorella [20%]; Acevedo Risco Melannie Cecilia [10%]; Calderon Valenzuela Wilfredo [30%]; Descalzi Santos Luis Armando [20%] | 12.8h | 12.8h |  |  |  |
| 122 | 1.2.1.5 | Firma Ficha de Relevamiento v2.0 |  | 3h | 2017-05-18 A | 2017-05-18 A | 121 | 100% |  | 2017-05-18 | 2017-05-18 | 3h |  |  |  | Guzman Garay Fátima Fiorella [10%]; Acevedo Risco Melannie Cecilia [10%]; Calderon Valenzuela Wilfredo [20%]; Descalzi Santos Luis Armando [5%]; Herrera Abad Sonia [5%]; Horna Leon Manuel [5%]; Quiñones Casas Duglas [5%]; Tume Ledesma Waldir [5%] | 1.95h | 1.95h |  |  |  |
| 123 | 1.2.1.6 | Ficha de Relevamiento | milestone | 0d | 2017-05-18 A | 2017-05-18 A | 122 | 100% |  | 2017-05-18 | 2017-05-18 |  |  |  |  |  |  |  |  |  |  |
| 124 | 1.2.2 | **Modelado de Procesos** |  | 50.38d | 2017-04-18 A | 2017-06-28 A |  | 100% |  | 2017-04-18 | 2017-06-28 | 50.38d |  |  |  |  | 343.6h | 343.6h | 5,825 | 5,825 | 5,825 |
| 125 | 1.2.2.1 | **Ficha Técnica del Proceso** |  | 50.38d | 2017-04-18 A | 2017-06-28 A |  | 100% |  | 2017-04-18 | 2017-06-28 | 50.38d |  |  |  |  | 343.6h | 343.6h | 5,825 | 5,825 | 5,825 |
| 126 | 1.2.2.1.1 | Elaborar FTP Gestión de Afiliación v1.0 |  | 8d | 2017-04-18 A | 2017-04-27 A | 118 | 100% |  | 2017-04-18 | 2017-04-27 | 8d |  |  |  | Apaza Aranda Oliver [40%]; Guzman Garay Fátima Fiorella [20%] | 38.4h | 38.4h | 800 | 800 | 800 |
| 127 | 1.2.2.1.2 | Revisión FTP Gestión de Afiliación v1.0 |  | 2d | 2017-04-28 A | 2017-05-02 A | 126 | 100% |  | 2017-04-28 | 2017-05-02 | 2d |  |  |  | Apaza Aranda Oliver [20%]; Guzman Garay Fátima Fiorella [20%]; Acevedo Risco Melannie Cecilia [10%]; Calderon Valenzuela Wilfredo [30%]; Descalzi Santos Luis Armando [20%] | 16h | 16h | 100 | 100 | 100 |
| 128 | 1.2.2.1.3 | Elaborar FTP Gestión de Afiliación v2.0 |  | 11d | 2017-05-15 A | 2017-05-29 A | 17 | 100% |  | 2017-05-15 | 2017-05-29 | 11d |  |  |  | De la Cruz Masías Alexander Romulo [40%]; Guzman Garay Fátima Fiorella [20%] | 52.8h | 52.8h | 1,100 | 1,100 | 1,100 |
| 129 | 1.2.2.1.4 | Revisión FTP Gestión de Afiliación v2.0 |  | 2d | 2017-05-30 A | 2017-05-31 A | 128 | 100% |  | 2017-05-30 | 2017-05-31 | 2d |  |  |  | Guzman Garay Fátima Fiorella [15%]; Acevedo Risco Melannie Cecilia [10%]; Calderon Valenzuela Wilfredo [20%]; Descalzi Santos Luis Armando [10%]; De la Cruz Masías Alexander Romulo [20%] | 12h | 12h | 100 | 100 | 100 |
| 130 | 1.2.2.1.5 | Firma FTP Gestión de Afiliación v2.0 |  | 3h | 2017-06-01 A | 2017-06-01 A | 129 | 100% |  | 2017-06-01 | 2017-06-01 | 3h |  |  |  | Guzman Garay Fátima Fiorella [5%]; Acevedo Risco Melannie Cecilia [5%]; Calderon Valenzuela Wilfredo [10%]; Descalzi Santos Luis Armando [5%]; De la Cruz Masías Alexander Romulo [20%]; Herrera Abad Sonia [5%]; Horna Leon Manuel [5%]; Quiñones Casas Duglas [5%]; Tume Ledesma Waldir [5%] | 1.95h | 1.95h | 18.75 | 18.75 | 18.75 |
| 131 | 1.2.2.1.6 | Elaborar FTP Registro de Ciudadano v1.0 |  | 8d | 2017-04-18 A | 2017-04-27 A | 126SS | 100% |  | 2017-04-18 | 2017-04-27 | 8d |  |  |  | Apaza Aranda Oliver [40%]; Guzman Garay Fátima Fiorella [20%] | 38.4h | 38.4h | 800 | 800 | 800 |
| 132 | 1.2.2.1.7 | Revisión FTP Registro de Ciudadano v1.0 |  | 2d | 2017-04-28 A | 2017-05-02 A | 131 | 100% |  | 2017-04-28 | 2017-05-02 | 2d |  |  |  | Apaza Aranda Oliver [20%]; Guzman Garay Fátima Fiorella [20%]; Acevedo Risco Melannie Cecilia [10%]; Calderon Valenzuela Wilfredo [30%]; Descalzi Santos Luis Armando [20%] | 16h | 16h | 100 | 100 | 100 |
| 133 | 1.2.2.1.8 | Elaborar FTP Registro de Ciudadano v2.0 |  | 11d | 2017-05-15 A | 2017-05-29 A | 17 | 100% |  | 2017-05-15 | 2017-05-29 | 11d |  |  |  | De la Cruz Masías Alexander Romulo [40%]; Guzman Garay Fátima Fiorella [20%] | 52.8h | 52.8h | 1,100 | 1,100 | 1,100 |
| 134 | 1.2.2.1.9 | Revisión FTP Registro de Ciudadano v2.0 |  | 2d | 2017-05-30 A | 2017-05-31 A | 133 | 100% |  | 2017-05-30 | 2017-05-31 | 2d |  |  |  | Guzman Garay Fátima Fiorella [15%]; Acevedo Risco Melannie Cecilia [10%]; Calderon Valenzuela Wilfredo [20%]; Descalzi Santos Luis Armando [10%]; De la Cruz Masías Alexander Romulo [20%] | 12h | 12h | 100 | 100 | 100 |
| 135 | 1.2.2.1.10 | Firma FTP Registro de Ciudadano v2.0 |  | 3h | 2017-06-01 A | 2017-06-01 A | 134 | 100% |  | 2017-06-01 | 2017-06-01 | 3h |  |  |  | Guzman Garay Fátima Fiorella [5%]; Acevedo Risco Melannie Cecilia [5%]; Calderon Valenzuela Wilfredo [20%]; Descalzi Santos Luis Armando [5%]; De la Cruz Masías Alexander Romulo [20%]; Herrera Abad Sonia [5%]; Horna Leon Manuel [5%]; Quiñones Casas Duglas [5%]; Tume Ledesma Waldir [5%] | 2.25h | 2.25h | 18.75 | 18.75 | 18.75 |
| 136 | 1.2.2.1.11 | Elaborar FTP Registro de DDJJ Vehicular v1.0 |  | 5d | 2017-04-28 A | 2017-05-05 A | 131 | 100% |  | 2017-04-28 | 2017-05-05 | 5d |  |  |  | Apaza Aranda Oliver [40%]; Guzman Garay Fátima Fiorella [20%] | 24h | 24h | 500 | 500 | 500 |
| 137 | 1.2.2.1.12 | Revisión FTP Registro de DDJJ Vehicular v1.0 |  | 1d | 2017-05-08 A | 2017-05-08 A | 136 | 100% |  | 2017-05-08 | 2017-05-08 | 1d |  |  |  | Apaza Aranda Oliver [20%]; Guzman Garay Fátima Fiorella [20%]; Acevedo Risco Melannie Cecilia [10%]; Calderon Valenzuela Wilfredo [30%]; Descalzi Santos Luis Armando [20%] | 8h | 8h | 50 | 50 | 50 |
| 138 | 1.2.2.1.13 | Elaborar FTP Registro de DDJJ Vehicular v2.0 |  | 3.5d | 2017-05-30 A | 2017-06-02 A | 133 | 100% |  | 2017-05-30 | 2017-06-02 | 3.5d |  |  |  | De la Cruz Masías Alexander Romulo [40%]; Guzman Garay Fátima Fiorella [20%] | 16.8h | 16.8h | 350 | 350 | 350 |
| 139 | 1.2.2.1.14 | Revisión FTP Registro de DDJJ Vehicular v2.0 |  | 1d | 2017-06-02 A | 2017-06-05 A | 138 | 100% |  | 2017-06-02 | 2017-06-05 | 1d |  |  |  | Guzman Garay Fátima Fiorella [20%]; Acevedo Risco Melannie Cecilia [10%]; Calderon Valenzuela Wilfredo [30%]; Descalzi Santos Luis Armando [20%]; De la Cruz Masías Alexander Romulo [20%] | 8h | 8h | 50 | 50 | 50 |
| 140 | 1.2.2.1.15 | Firma FTP Registro de DDJJ Vehicular v2.0 |  | 3h | 2017-06-05 A | 2017-06-05 A | 139 | 100% |  | 2017-06-05 | 2017-06-05 | 3h |  |  |  | Guzman Garay Fátima Fiorella [5%]; Acevedo Risco Melannie Cecilia [5%]; Calderon Valenzuela Wilfredo [20%]; Descalzi Santos Luis Armando [5%]; De la Cruz Masías Alexander Romulo [20%]; Herrera Abad Sonia [5%]; Horna Leon Manuel [5%]; Quiñones Casas Duglas [5%]; Tume Ledesma Waldir [5%] | 2.25h | 2.25h | 18.75 | 18.75 | 18.75 |
| 141 | 1.2.2.1.16 | Elaborar FTP Registro de Liquidación de Alcabala v2.0 |  | 5d | 2017-06-19 A | 2017-06-23 A |  | 100% |  | 2017-06-19 | 2017-06-23 | 5d |  |  | start no earlier than 2017-06-19 | De la Cruz Masías Alexander Romulo [40%]; Guzman Garay Fátima Fiorella [20%] | 24h | 24h | 500 | 500 | 500 |
| 142 | 1.2.2.1.17 | Revisión FTP Registro de Liquidación de Alcabala v2.0 |  | 2d | 2017-06-26 A | 2017-06-27 A | 141 | 100% |  | 2017-06-26 | 2017-06-27 | 2d |  |  |  | Guzman Garay Fátima Fiorella [20%]; Acevedo Risco Melannie Cecilia [10%]; Calderon Valenzuela Wilfredo [30%]; Descalzi Santos Luis Armando [20%]; De la Cruz Masías Alexander Romulo [20%] | 16h | 16h | 100 | 100 | 100 |
| 143 | 1.2.2.1.18 | Firma FTP Registro de Liquidación de Alcabala v2.0 |  | 3h | 2017-06-28 A | 2017-06-28 A | 142 | 100% |  | 2017-06-28 | 2017-06-28 | 3h |  |  |  | Guzman Garay Fátima Fiorella [5%]; Acevedo Risco Melannie Cecilia [5%]; Calderon Valenzuela Wilfredo [10%]; Descalzi Santos Luis Armando [5%]; De la Cruz Masías Alexander Romulo [20%]; Herrera Abad Sonia [5%]; Horna Leon Manuel [5%]; Quiñones Casas Duglas [5%]; Tume Ledesma Waldir [5%] | 1.95h | 1.95h | 18.75 | 18.75 | 18.75 |
| 144 | 1.2.2.1.19 | Ficha Técnica del Proceso | milestone | 0d | 2017-06-28 A | 2017-06-28 A | 143 | 100% |  | 2017-06-28 | 2017-06-28 |  |  |  |  |  |  |  |  |  |  |

| ID | WBS | Task | Type | Duration | Start | Finish | Predecessors | Complete | Remaining | Baseline start | Baseline finish | Baseline duration | Total slack | Resources | Work | Actual work | Cost | Baseline cost | Actual cost |
| --- | --- | --- | --- | --- | --- | --- | --- | --- | --- | --- | --- | --- | --- | --- | --- | --- | --- | --- | --- |
| 145 | 1.2.3 | **Análisis y Diseño de Sistemas** |  | 94.25d | 2017-04-18 A | 2017-09-04 A |  | 100% |  | 2017-04-18 | 2017-09-04 | 94.25d |  |  | 590.4h | 590.4h | 12,600 | 12,600 | 12,600 |
| 146 | 1.2.3.1 | **Análisis Funcional** |  | 38d | 2017-04-18 A | 2017-06-09 A |  | 100% |  | 2017-04-18 | 2017-06-09 | 38d |  |  | 317.6h | 317.6h | 4,980 | 4,980 | 4,980 |
| 147 | 1.2.3.1.1 | Elaborar Documento Funcional Gestión de Afiliación |  | 13d | 2017-04-18 A | 2017-05-05 A | 118 | 100% |  | 2017-04-18 | 2017-05-05 | 13d |  | Descalzi Santos Luis Armando [40%]; Neyra Villanueva Cesar [40%] | 83.2h | 83.2h | 1,560 | 1,560 | 1,560 |
| 148 | 1.2.3.1.2 | Revisión y firma DF Gestión de Afiliación |  | 5d | 2017-05-26 A | 2017-06-01 A | 149 | 100% |  | 2017-05-26 | 2017-06-01 | 5d |  | Guzman Garay Fátima Fiorella [10%]; Acevedo Risco Melannie Cecilia [10%]; Calderon Valenzuela Wilfredo [20%]; Descalzi Santos Luis Armando [10%]; Herrera Abad Sonia [5%]; Horna Leon Manuel [5%]; Quiñones Casas Duglas [5%]; Neyra Villanueva Cesar [20%]; Tume Ledesma Waldir [5%] | 36h | 36h | 300 | 300 | 300 |
| 149 | 1.2.3.1.3 | Elaborar Documento Funcional Registro de Ciudadano |  | 14d | 2017-05-08 A | 2017-05-25 A | 147 | 100% |  | 2017-05-08 | 2017-05-25 | 14d |  | Descalzi Santos Luis Armando [40%]; Neyra Villanueva Cesar [40%] | 89.6h | 89.6h | 1,680 | 1,680 | 1,680 |
| 150 | 1.2.3.1.4 | Revisión y firma DF Registro de Ciudadano |  | 5d | 2017-05-26 A | 2017-06-01 A | 148SS | 100% |  | 2017-05-26 | 2017-06-01 | 5d |  | Guzman Garay Fátima Fiorella [10%]; Acevedo Risco Melannie Cecilia [10%]; Calderon Valenzuela Wilfredo [20%]; Descalzi Santos Luis Armando [10%]; Herrera Abad Sonia [5%]; Horna Leon Manuel [5%]; Quiñones Casas Duglas [5%]; Neyra Villanueva Cesar [20%]; Tume Ledesma Waldir [5%] | 36h | 36h | 300 | 300 | 300 |
| 151 | 1.2.3.1.5 | Elaborar Documento Funcional Registro DDJJ Vehicular |  | 8d | 2017-05-26 A | 2017-06-06 A | 149 | 100% |  | 2017-05-26 | 2017-06-06 | 8d |  | Descalzi Santos Luis Armando [40%]; Neyra Villanueva Cesar [40%] | 51.2h | 51.2h | 960 | 960 | 960 |
| 152 | 1.2.3.1.6 | Revisión y firma DF Registro DDJJ Vehicular |  | 3d | 2017-06-07 A | 2017-06-09 A | 151 | 100% |  | 2017-06-07 | 2017-06-09 | 3d |  | Guzman Garay Fátima Fiorella [10%]; Acevedo Risco Melannie Cecilia [10%]; Calderon Valenzuela Wilfredo [20%]; Descalzi Santos Luis Armando [10%]; Herrera Abad Sonia [5%]; Horna Leon Manuel [5%]; Quiñones Casas Duglas [5%]; Neyra Villanueva Cesar [20%]; Tume Ledesma Waldir [5%] | 21.6h | 21.6h | 180 | 180 | 180 |
| 153 | 1.2.3.1.7 | Documento de Definición Funcional | milestone | 0d | 2017-06-09 A | 2017-06-09 A | 152 | 100% |  | 2017-06-09 | 2017-06-09 |  |  |  |  |  |  |  |  |
| 154 | 1.2.3.2 | **Análisis Técnico** |  | 59.25d | 2017-06-07 A | 2017-09-04 A |  | 100% |  | 2017-06-07 | 2017-09-04 | 59.25d |  |  | 272.8h | 272.8h | 7,620 | 7,620 | 7,620 |
| 155 | 1.2.3.2.1 | Elaborar Documento Técnico de Gestión de Afiliación I |  | 8d | 2017-06-07 A | 2017-06-16 A | 151 | 100% |  | 2017-06-07 | 2017-06-16 | 8d |  | Descalzi Santos Luis Armando [40%] | 25.6h | 25.6h |  |  |  |
| 156 | 1.2.3.2.2 | Elaborar Documento Técnico de Gestión de Afiliación II |  | 2d | 2017-06-19 A | 2017-06-20 A | 155 | 100% |  | 2017-06-19 | 2017-06-20 | 2d |  | Descalzi Santos Luis Armando [10%]; Huaraquispe Aranda Gerardo Manuel [70%] | 12.8h | 12.8h | 420 | 420 | 420 |
| 157 | 1.2.3.2.3 | Revisión DT Gestión de Afiliación |  | 2d | 2017-06-21 A | 2017-06-22 A | 156 | 100% |  | 2017-06-21 | 2017-06-22 | 2d |  | Del Piélago Alva Marleny [20%]; Descalzi Santos Luis Armando [10%]; Huaraquispe Aranda Gerardo Manuel [30%]; Marquez Aylas Edgard [20%]; Celis Llave Luis Augusto [20%] | 16h | 16h | 180 | 180 | 180 |
| 158 | 1.2.3.2.4 | Firma DT Gestión de Afiliación |  | 2h | 2017-06-23 A | 2017-06-23 A | 157 | 100% |  | 2017-06-23 | 2017-06-23 | 2h |  |  |  |  |  |  |  |
| 159 | 1.2.3.2.5 | Elaborar Documento Técnico de Registro de Ciudadano |  | 16d | 2017-06-23 A | 2017-07-18 A | 157 | 100% |  | 2017-06-23 | 2017-07-18 | 16d |  | Descalzi Santos Luis Armando [10%]; Huaraquispe Aranda Gerardo Manuel [60%] | 89.6h | 89.6h | 2,880 | 2,880 | 2,880 |
| 160 | 1.2.3.2.6 | Revisión DT Registro de Ciudadano |  | 5d | 2017-07-19 A | 2017-07-25 A | 159 | 100% |  | 2017-07-19 | 2017-07-25 | 5d |  |  |  |  |  |  |  |
| 161 | 1.2.3.2.7 | Firma DT Registro de Ciudadano |  | 2h | 2017-07-26 A | 2017-07-26 A | 160 | 100% |  | 2017-07-26 | 2017-07-26 | 2h |  |  |  |  |  |  |  |
| 162 | 1.2.3.2.8 | Elaborar Documento Técnico de Registro de DDJJ Vehicular |  | 23d | 2017-07-26 A | 2017-08-28 A | 160 | 100% |  | 2017-07-26 | 2017-08-28 | 23d |  | Descalzi Santos Luis Armando [10%]; Huaraquispe Aranda Gerardo Manuel [60%] | 128.8h | 128.8h | 4,140 | 4,140 | 4,140 |
| 163 | 1.2.3.2.9 | Revisión DT Registro de DDJJ Vehicular |  | 3d | 2017-08-29 A | 2017-09-01 A | 162 | 100% |  | 2017-08-29 | 2017-09-01 | 3d |  |  |  |  |  |  |  |
| 164 | 1.2.3.2.10 | Firma DT Registro de DDJJ Vehicular |  | 2h | 2017-09-04 A | 2017-09-04 A | 163 | 100% |  | 2017-09-04 | 2017-09-04 | 2h |  |  |  |  |  |  |  |
| 165 | 1.2.3.2.11 | Documento Técnico de Sistemas | milestone | 0d | 2017-09-04 A | 2017-09-04 A | 164 | 100% |  | 2017-09-04 | 2017-09-04 |  |  |  |  |  |  |  |  |
| 166 | 1.2.4 | **Construcción** |  | 107.5d | 2017-06-27 A | 2017-11-30 |  | 62% | 40.44d | 2017-06-27 | 2017-11-30 | 107.5d | 10.5d |  | 1073.4h | 525h | 34,398.12 | 33,950 | 16,508.75 |
| 167 | 1.2.4.1 | **Prototipos e Interfaces** |  | 25.5d | 2017-06-27 A | 2017-08-04 A |  | 100% |  | 2017-06-27 | 2017-08-04 | 25.5d |  |  | 69.2h | 69.2h | 2,130 | 2,130 | 2,130 |
| 168 | 1.2.4.1.1 | Elaboración de interfaces |  | 22d | 2017-06-27 A | 2017-07-31 A | 48 | 100% |  | 2017-06-27 | 2017-07-31 | 22d |  |  |  |  |  |  |  |
| 169 | 1.2.4.1.2 | Estandarización de Interfaces según diseño propuesto |  | 16h | 2017-08-01 A | 2017-08-02 A | 168 | 100% |  | 2017-08-01 | 2017-08-02 | 16h |  | Fernandez Gargurevich Miguel [70%]; Luna Vasquez Julio Bryan [70%]; López Cárdenas Edward Pavel [70%]; Trebejo Loayza Waldo Jefferson [70%] | 44.8h | 44.8h | 1,400 | 1,400 | 1,400 |
| 170 | 1.2.4.1.3 | Análisis de interfaces según asignación de trabajo |  | 8h | 2017-08-03 A | 2017-08-03 A | 169 | 100% |  | 2017-08-03 | 2017-08-03 | 8h |  | Fernandez Gargurevich Miguel [70%]; López Cárdenas Edward Pavel [70%]; Luna Vasquez Julio Bryan [70%]; Trebejo Loayza Waldo Jefferson [70%] | 22.4h | 22.4h | 700 | 700 | 700 |
| 171 | 1.2.4.1.4 | Habilitación de Fuentes en Visual SourceSafe |  | 4h | 2017-08-04 A | 2017-08-04 A | 170 | 100% |  | 2017-08-04 | 2017-08-04 | 4h |  | Huaraquispe Aranda Gerardo Manuel [20%]; Descalzi Santos Luis Armando [30%] | 2h | 2h | 30 | 30 | 30 |

| ID | WBS | Task | Duration | Start | Finish | Predecessors | Complete | Remaining | Baseline start | Baseline finish | Baseline duration | Total slack | Free slack | Constraint | Resources | Work | Actual work | Cost | Baseline cost | Actual cost |
| --- | --- | --- | --- | --- | --- | --- | --- | --- | --- | --- | --- | --- | --- | --- | --- | --- | --- | --- | --- | --- |
| 172 | 1.2.4.2 | **Componente 1: Gestión de Afiliación** | 44.75d | 2017-08-04 A | 2017-10-09 |  | 86% | 6.34d | 2017-08-04 | 2017-09-07 | 22.75d | 47.75d |  |  |  | 246.2h | 214.2h | 7,898.12 | 6,175 | 6,728.75 |
| 173 | 1.2.4.2.1 | **Creación de BD** | 14.5d | 2017-08-04 A | 2017-08-24 A |  | 100% |  | 2017-08-04 | 2017-08-15 | 6.75d |  |  |  |  | 72.8h | 72.8h | 2,310 | 1,980 | 2,310 |
| 174 | 1.2.4.2.1.1 | Análisis del modelo de datos | 12h | 2017-08-04 A | 2017-08-07 A | 171 | 100% |  | 2017-08-04 | 2017-08-07 | 12h |  |  |  | Luna Vasquez Julio Bryan [60%]; Fernandez Gargurevich Miguel [60%]; Huaraquispe Aranda Gerardo Manuel [10%] | 15.6h | 15.6h | 495 | 495 | 495 |
| 175 | 1.2.4.2.1.2 | Modificación y ajustes del Modelo de datos | 16h | 2017-08-08 A | 2017-08-09 A | 174 | 100% |  | 2017-08-08 | 2017-08-09 | 16h |  |  |  | Luna Vasquez Julio Bryan [60%]; Fernandez Gargurevich Miguel [60%]; Huaraquispe Aranda Gerardo Manuel [10%] | 20.8h | 20.8h | 660 | 660 | 660 |
| 176 | 1.2.4.2.1.3 | Elaboración de scripts para la creación de BD | 12h | 2017-08-10 A | 2017-08-11 A | 175 | 100% |  | 2017-08-10 | 2017-08-11 | 12h |  |  |  | Luna Vasquez Julio Bryan [60%]; Fernandez Gargurevich Miguel [60%] | 14.4h | 14.4h | 450 | 450 | 450 |
| 177 | 1.2.4.2.1.4 | Validación de scripts y estándares | 4h | 2017-08-11 A | 2017-08-11 A | 176 | 100% |  | 2017-08-11 | 2017-08-11 | 4h |  |  |  | Huaraquispe Aranda Gerardo Manuel [20%] | 0.8h | 0.8h | 30 | 30 | 30 |
| 178 | 1.2.4.2.1.5 | Validación de accesos | 2h | 2017-08-14 A | 2017-08-14 A | 177 | 100% |  | 2017-08-14 | 2017-08-14 | 2h |  |  |  | Huaraquispe Aranda Gerardo Manuel [20%] | 0.4h | 0.4h | 15 | 15 | 15 |
| 179 | 1.2.4.2.1.6 | Ejecución de scripts de creación de BD | 8h | 2017-08-14 A | 2017-08-15 A | 178 | 100% |  | 2017-08-14 | 2017-08-15 | 8h |  |  |  | Luna Vasquez Julio Bryan [60%]; Fernandez Gargurevich Miguel [60%]; Huaraquispe Aranda Gerardo Manuel [10%] | 10.4h | 10.4h | 330 | 330 | 330 |
| 180 | 1.2.4.2.1.7 | Levantamiento de Observaciones | 8h | 2017-08-24 A | 2017-08-24 A |  | 100% |  |  |  |  |  |  |  | Luna Vasquez Julio Bryan [60%]; Fernandez Gargurevich Miguel [60%]; Huaraquispe Aranda Gerardo Manuel [10%] | 10.4h | 10.4h | 330 |  | 330 |
| 181 | 1.2.4.2.2 | **Implementación de Registro de Afiliación** | 13d | 2017-08-14 A | 2017-08-31 A |  | 100% |  | 2017-08-15 | 2017-08-24 | 7.5d |  |  |  |  | 110.6h | 110.6h | 3,456.25 | 1,312.5 | 3,456.25 |
| 182 | 1.2.4.2.2.1 | Implementación de procedimientos | 16h | 2017-08-15 A | 2017-08-17 A | 179 | 100% |  | 2017-08-15 | 2017-08-17 | 16h |  |  |  | Fernandez Gargurevich Miguel [70%] | 11.2h | 11.2h | 350 | 350 | 350 |
| 183 | 1.2.4.2.2.2 | Validaciones y reglas de negocio | 16h | 2017-08-17 A | 2017-08-21 A | 182 | 100% |  | 2017-08-17 | 2017-08-21 | 16h |  |  |  | Fernandez Gargurevich Miguel [70%] | 11.2h | 11.2h | 350 | 350 | 350 |
| 184 | 1.2.4.2.2.3 | Implementación de Capcha | 4h | 2017-08-21 A | 2017-08-21 A | 183 | 100% |  | 2017-08-21 | 2017-08-21 | 4h |  |  |  | Fernandez Gargurevich Miguel [70%] | 2.8h | 2.8h | 87.5 | 87.5 | 87.5 |
| 185 | 1.2.4.2.2.4 | Implementación de envío de correo | 52h | 2017-08-21 A | 2017-08-31 A | 184 | 100% |  | 2017-08-21 | 2017-08-23 | 12h |  |  |  | Fernandez Gargurevich Miguel [70%] | 36.4h | 36.4h | 1,137.5 | 262.5 | 1,137.5 |
| 186 | 1.2.4.2.2.5 | Registro de Datos | 12h | 2017-08-23 A | 2017-08-24 A | 185 | 100% |  | 2017-08-23 | 2017-08-24 | 12h |  |  |  | Fernandez Gargurevich Miguel [70%] | 8.4h | 8.4h | 262.5 | 262.5 | 262.5 |
| 187 | 1.2.4.2.2.6 | Adecuación del diseño según observaciones del usuario | 8h | 2017-08-22 A | 2017-08-22 A |  | 100% |  |  |  |  |  |  | start no earlier than 2017-08-22 | Fernandez Gargurevich Miguel [70%] | 5.6h | 5.6h | 175 |  | 175 |
| 188 | 1.2.4.2.2.7 | Implementación de Términos y condiciones | 2h | 2017-08-14 A | 2017-08-14 A | 177 | 100% |  |  |  |  |  |  |  | Fernandez Gargurevich Miguel [70%] | 1.4h | 1.4h | 43.75 |  | 43.75 |
| 189 | 1.2.4.2.2.8 | Consulta de datos al SIAT | 8h | 2017-08-16 A | 2017-08-16 A | 188SS+2d | 100% |  |  |  |  |  |  |  | Fernandez Gargurevich Miguel [70%] | 5.6h | 5.6h | 175 |  | 175 |
| 190 | 1.2.4.2.2.9 | Implementación de formato de DJ Afiliación | 24h | 2017-08-17 A | 2017-08-21 A | 189 | 100% |  |  |  |  |  |  |  | Fernandez Gargurevich Miguel [70%] | 16.8h | 16.8h | 525 |  | 525 |
| 191 | 1.2.4.2.2.10 | Validaciones de cliente (Campos y mensajes) | 12h | 2017-08-29 A | 2017-08-31 A |  | 100% |  |  |  |  |  |  | start no earlier than 2017-08-29 | Fernandez Gargurevich Miguel [70%] | 8.4h | 8.4h | 262.5 |  | 262.5 |
| 192 | 1.2.4.2.2.11 | Implementación de canales externos | 4h | 2017-08-31 A | 2017-08-31 A | 191 | 100% |  |  |  |  |  |  |  | Fernandez Gargurevich Miguel [70%] | 2.8h | 2.8h | 87.5 |  | 87.5 |
| 193 | 1.2.4.2.3 | **Implementación Habilitar Usuario** | 30.75d | 2017-08-15 A | 2017-09-27 |  | 93% | 2.02d | 2017-08-15 | 2017-08-22 | 5.5d | 47.75d |  |  |  | 30.8h | 30.8h | 962.5 | 962.5 | 962.5 |
| 194 | 1.2.4.2.3.1 | Implementación de procedimientos | 8h | 2017-08-15 A | 2017-08-16 A | 179 | 100% |  | 2017-08-15 | 2017-08-16 | 8h |  |  |  | Luna Vasquez Julio Bryan [70%] | 5.6h | 5.6h | 175 | 175 | 175 |
| 195 | 1.2.4.2.3.2 | Validaciones y reglas de negocio | 8h | 2017-08-16 A | 2017-08-17 A | 194 | 100% |  | 2017-08-16 | 2017-08-17 | 8h |  |  |  | Luna Vasquez Julio Bryan [70%] | 5.6h | 5.6h | 175 | 175 | 175 |
| 196 | 1.2.4.2.3.3 | Funcionalidad de Vista Preliminar e Imprimir | 12h | 2017-08-17 A | 2017-08-18 A | 195 | 100% |  | 2017-08-17 | 2017-08-18 | 12h |  |  |  | Luna Vasquez Julio Bryan [70%] | 8.4h | 8.4h | 262.5 | 262.5 | 262.5 |
| 197 | 1.2.4.2.3.4 | Funcionalidades Modificar e Imprimir | 8h | 2017-08-18 A | 2017-08-21 A | 196 | 100% |  | 2017-08-18 | 2017-08-21 | 8h |  |  |  | Luna Vasquez Julio Bryan [70%] | 5.6h | 5.6h | 175 | 175 | 175 |
| 198 | 1.2.4.2.3.5 | Recuperación de datos (servicio PIDE) | 8h | 2017-08-21 A | 2017-08-22 A | 197 | 100% |  | 2017-08-21 | 2017-08-22 | 8h |  |  |  | Luna Vasquez Julio Bryan [70%] | 5.6h | 5.6h | 175 | 175 | 175 |
| 199 | 1.2.4.2.3.6 | Consulta de Datos desde SIAT | 16h | 2017-08-21 A | 2017-08-22 A |  | 100% |  |  |  |  |  |  | start no earlier than 2017-08-21 |  |  |  |  |  |  |
| 200 | 1.2.4.2.3.7 | Adecuación del diseño según observaciones del usuario | 8h | 2017-08-22 A | 2017-08-23 A | 198 | 100% |  |  |  |  |  |  |  |  |  |  |  |  |  |
| 201 | 1.2.4.2.3.8 | Validaciones de cliente (Campos y mensajes) | 48h | 2017-08-28 A | 2017-09-05 A |  | 100% |  |  |  |  |  |  | start no earlier than 2017-08-28 |  |  |  |  |  |  |
| 202 | 1.2.4.2.3.9 | Implementar habilitación desde canales externos | 12h | 2017-09-06 A | 2017-09-07 A | 201 | 100% |  |  |  |  |  |  |  |  |  |  |  |  |  |
| 203 | 1.2.4.2.3.10 | Implementación de validación de domicilio | 16h | 2017-09-07 A | 2017-09-11 A | 202 | 100% |  |  |  |  |  |  |  |  |  |  |  |  |  |
| 204 | 1.2.4.2.3.11 | Corrección de observaciones de código | 24h | 2017-09-11 A | 2017-09-14 A | 203 | 100% |  |  |  |  |  |  |  |  |  |  |  |  |  |
| 205 | 1.2.4.2.3.12 | Validación del desarrollo | 60h | 2017-09-14 A | 2017-09-25 A | 204 | 100% |  |  |  |  |  |  |  |  |  |  |  |  |  |
| 206 | 1.2.4.2.3.13 | Ajustes al desarrollo | 16h | 2017-09-26 | 2017-09-27 | 205 |  |  |  |  |  | 47.75d | 0d |  |  |  |  |  |  |  |

| ID | WBS | Task | Duration | Start | Finish | Predecessors | Complete | Remaining | Baseline start | Baseline finish | Baseline duration | Total slack | Free slack | Resources | Work | Actual work | Cost | Baseline cost | Actual cost |
| --- | --- | --- | --- | --- | --- | --- | --- | --- | --- | --- | --- | --- | --- | --- | --- | --- | --- | --- | --- |
| 207 | 1.2.4.2.4 | **Pruebas** | 5.25d | 2017-09-28 | 2017-10-05 |  |  |  | 2017-08-22 | 2017-09-05 | 8.5d | 47.75d |  |  | 24h |  | 869.38 | 1,620 |  |
| 208 | 1.2.4.2.4.1 | Definición de Casos de pruebas | 2h | 2017-09-28 | 2017-09-28 | 206 |  |  | 2017-08-22 | 2017-08-23 | 4h | 47.75d | 0d | Huaraquispe Aranda Gerardo Manuel [30%]; Luna Vasquez Julio Bryan [50%] | 1.6h |  | 53.75 | 107.5 |  |
| 209 | 1.2.4.2.4.2 | Validación de data de Prueba | 1h | 2017-09-28 | 2017-09-28 | 208 |  |  | 2017-08-23 | 2017-08-23 | 4h | 47.75d | 0d | Huaraquispe Aranda Gerardo Manuel [30%]; Luna Vasquez Julio Bryan [50%] | 0.8h |  | 26.88 | 107.5 |  |
| 210 | 1.2.4.2.4.3 | Pruebas Unitarias | 4h | 2017-09-28 | 2017-09-28 | 209 |  |  | 2017-08-23 | 2017-08-25 | 16h | 47.75d | 0d | Fernandez Gargurevich Miguel [30%]; Huaraquispe Aranda Gerardo Manuel [30%]; Luna Vasquez Julio Bryan [30%] | 3.6h |  | 120 | 480 |  |
| 211 | 1.2.4.2.4.4 | Ajustes | 1h | 2017-09-28 | 2017-09-28 | 210 |  |  | 2017-08-25 | 2017-08-28 | 8h | 47.75d | 0d | Fernandez Gargurevich Miguel [50%]; Luna Vasquez Julio Bryan [50%] | 1h |  | 31.25 | 250 |  |
| 212 | 1.2.4.2.4.5 | Validación Final | 2h | 2017-09-29 | 2017-09-29 | 211 |  |  | 2017-08-28 | 2017-08-29 | 4h | 47.75d | 0d | Huaraquispe Aranda Gerardo Manuel [50%] | 1h |  | 37.5 | 75 |  |
| 213 | 1.2.4.2.4.6 | Revisión del pase por parte del A.F.C.C.T.I. | 8h | 2017-09-29 | 2017-10-02 | 212 |  |  | 2017-08-29 | 2017-08-31 | 8h | 47.75d | 0d | Huaraquispe Aranda Gerardo Manuel [50%] | 4h |  | 150 | 150 |  |
| 214 | 1.2.4.2.4.7 | Pruebas de Aceptación | 24h | 2017-10-02 | 2017-10-05 | 213 |  |  | 2017-08-31 | 2017-09-05 | 24h | 47.75d | 0d | Huaraquispe Aranda Gerardo Manuel [50%] | 12h |  | 450 | 450 |  |
| 215 | 1.2.4.2.5 | Solicitud de Pase a Producción | 16h | 2017-10-05 | 2017-10-09 | 214 |  |  | 2017-09-05 | 2017-09-07 | 16h | 47.75d |  | Huaraquispe Aranda Gerardo Manuel [50%] | 8h |  | 300 | 300 |  |
| 216 | 1.2.4.3 | **Componente 2: Registro del Ciudadano** | 51.5d | 2017-08-04 A | 2017-10-17 |  | 66% | 17.54d | 2017-08-04 | 2017-10-05 | 43.5d | 41d |  |  | 340.4h | 241.6h | 10,925 | 12,200 | 7,650 |
| 217 | 1.2.4.3.1 | **Creación de BD** | 9d | 2017-08-04 A | 2017-08-17 A |  | 100% |  | 2017-08-04 | 2017-08-17 | 9d |  |  |  | 92.8h | 92.8h | 3,000 | 3,000 | 3,000 |
| 218 | 1.2.4.3.1.1 | Análisis del modelo de datos | 24h | 2017-08-04 A | 2017-08-09 A | 171 | 100% |  | 2017-08-04 | 2017-08-09 | 24h |  |  | Huaraquispe Aranda Gerardo Manuel [20%]; López Cárdenas Edward Pavel [60%]; Trebejo Loayza Waldo Jefferson [60%] | 33.6h | 33.6h | 1,080 | 1,080 | 1,080 |
| 219 | 1.2.4.3.1.2 | Modificación y ajustes del Modelo de datos actual | 16h | 2017-08-09 A | 2017-08-11 A | 218 | 100% |  | 2017-08-09 | 2017-08-11 | 16h |  |  | Huaraquispe Aranda Gerardo Manuel [20%]; López Cárdenas Edward Pavel [60%]; Trebejo Loayza Waldo Jefferson [60%] | 22.4h | 22.4h | 720 | 720 | 720 |
| 220 | 1.2.4.3.1.3 | Elaboración de scripts para la creación de BD | 16h | 2017-08-11 A | 2017-08-15 A | 219 | 100% |  | 2017-08-11 | 2017-08-15 | 16h |  |  | Huaraquispe Aranda Gerardo Manuel [20%]; López Cárdenas Edward Pavel [60%]; Trebejo Loayza Waldo Jefferson [60%] | 22.4h | 22.4h | 720 | 720 | 720 |
| 221 | 1.2.4.3.1.4 | Validación de scripts y estándares | 8h | 2017-08-15 A | 2017-08-16 A | 220 | 100% |  | 2017-08-15 | 2017-08-16 | 8h |  |  | Huaraquispe Aranda Gerardo Manuel [30%] | 2.4h | 2.4h | 90 | 90 | 90 |
| 222 | 1.2.4.3.1.5 | Ejecución de scripts de creación de BD | 8h | 2017-08-16 A | 2017-08-17 A | 221 | 100% |  | 2017-08-16 | 2017-08-17 | 8h |  |  | Huaraquispe Aranda Gerardo Manuel [30%]; López Cárdenas Edward Pavel [60%]; Trebejo Loayza Waldo Jefferson [60%] | 12h | 12h | 390 | 390 | 390 |
| 223 | 1.2.4.3.2 | **Implementación de Registro del Ciudadano** | 29d | 2017-08-17 A | 2017-09-28 |  | 91% | 2.52d | 2017-08-17 | 2017-09-13 | 18.5d | 41d |  |  | 168h | 148.8h | 5,250 | 5,550 | 4,650 |
| 224 | 1.2.4.3.2.1 | Implementación de procedimientos | 24h | 2017-08-17 A | 2017-08-22 A | 222 | 100% |  | 2017-08-17 | 2017-08-22 | 24h |  |  | López Cárdenas Edward Pavel [60%]; Trebejo Loayza Waldo Jefferson [60%] | 28.8h | 28.8h | 900 | 900 | 900 |
| 225 | 1.2.4.3.2.2 | Validaciones y reglas de negocio | 24h | 2017-08-22 A | 2017-08-25 A | 224 | 100% |  | 2017-08-22 | 2017-08-25 | 24h |  |  | López Cárdenas Edward Pavel [60%]; Trebejo Loayza Waldo Jefferson [60%] | 28.8h | 28.8h | 900 | 900 | 900 |
| 226 | 1.2.4.3.2.3 | Registro de Dirección | 40h | 2017-08-25 A | 2017-09-04 A | 225 | 100% |  | 2017-08-25 | 2017-09-04 | 40h |  |  | López Cárdenas Edward Pavel [60%]; Trebejo Loayza Waldo Jefferson [60%] | 48h | 48h | 1,500 | 1,500 | 1,500 |
| 227 | 1.2.4.3.2.4 | Corrección de observaciones de código | 8h | 2017-09-04 A | 2017-09-05 A | 226 | 100% |  |  |  |  |  |  |  |  |  |  |  |  |
| 228 | 1.2.4.3.2.5 | Implementación de funcionalidad de correlativos y parámetros | 12h | 2017-09-05 A | 2017-09-06 A | 227 | 100% |  |  |  |  |  |  |  |  |  |  |  |  |
| 229 | 1.2.4.3.2.6 | Implementación de validación de domicilio | 24h | 2017-09-07 A | 2017-09-11 A | 228 | 100% |  |  |  |  |  |  |  |  |  |  |  |  |
| 230 | 1.2.4.3.2.7 | Datos de Contacto | 12h | 2017-09-12 A | 2017-09-13 A | 229 | 100% |  | 2017-09-04 | 2017-09-05 | 12h |  |  | López Cárdenas Edward Pavel [60%]; Luna Vasquez Julio Bryan [60%] | 14.4h | 14.4h | 450 | 450 | 450 |
| 231 | 1.2.4.3.2.8 | Datos del Relacionado | 24h | 2017-09-13 A | 2017-09-18 A | 230 | 100% |  | 2017-09-06 | 2017-09-07 | 16h |  |  | López Cárdenas Edward Pavel [60%]; Luna Vasquez Julio Bryan [60%] | 28.8h | 28.8h | 900 | 600 | 900 |
| 232 | 1.2.4.3.2.9 | Datos de Delegado | 8h | 2017-09-26 | 2017-09-27 | 272 |  |  | 2017-09-08 | 2017-09-11 | 16h | 41d | 0d | López Cárdenas Edward Pavel [60%]; Luna Vasquez Julio Bryan [60%] | 9.6h |  | 300 | 600 |  |
| 233 | 1.2.4.3.2.10 | Registro de Datos | 8h | 2017-09-27 | 2017-09-28 | 232 |  |  | 2017-09-12 | 2017-09-13 | 16h | 41d | 0d | López Cárdenas Edward Pavel [60%]; Luna Vasquez Julio Bryan [60%] | 9.6h |  | 300 | 600 |  |

| ID | WBS | Task | Duration | Start | Finish | Predecessors | Baseline start | Baseline finish | Baseline duration | Total slack | Free slack | Constraint | Resources | Work | Cost | Baseline cost |
| --- | --- | --- | --- | --- | --- | --- | --- | --- | --- | --- | --- | --- | --- | --- | --- | --- |
| 234 | 1.2.4.3.3 | **Pruebas** | 11.5d | 2017-09-28 | 2017-10-13 |  | 2017-09-14 | 2017-10-03 | 14d | 41d |  |  |  | 74.8h | 2,495 | 3,470 |
| 235 | 1.2.4.3.3.1 | Definición de Casos de pruebas | 6h | 2017-09-28 | 2017-09-29 | 233 | 2017-09-14 | 2017-09-14 | 6h | 41d | 0d |  | Huaraquispe Aranda Gerardo Manuel [30%]; López Cárdenas Edward Pavel [60%]; Luna Vasquez Julio Bryan [60%] | 9h | 292.5 | 292.5 |
| 236 | 1.2.4.3.3.2 | Validación de data de Prueba | 6h | 2017-09-29 | 2017-09-29 | 235 | 2017-09-14 | 2017-09-15 | 6h | 41d | 0d |  | Huaraquispe Aranda Gerardo Manuel [30%]; López Cárdenas Edward Pavel [60%]; Luna Vasquez Julio Bryan [60%] | 9h | 292.5 | 292.5 |
| 237 | 1.2.4.3.3.3 | Pruebas Unitarias | 16h | 2017-10-02 | 2017-10-03 | 236 | 2017-09-15 | 2017-09-21 | 36h | 41d | 0d |  | Huaraquispe Aranda Gerardo Manuel [30%]; López Cárdenas Edward Pavel [60%]; Luna Vasquez Julio Bryan [60%] | 24h | 780 | 1,755 |
| 238 | 1.2.4.3.3.4 | Ajustes | 8h | 2017-10-04 | 2017-10-04 | 237 | 2017-09-22 | 2017-09-22 | 8h | 41d | 0d |  | López Cárdenas Edward Pavel; Luna Vasquez Julio Bryan | 16h | 500 | 500 |
| 239 | 1.2.4.3.3.5 | Validación Final | 8h | 2017-10-05 | 2017-10-05 | 238 | 2017-09-25 | 2017-09-25 | 8h | 41d | 0d |  | Huaraquispe Aranda Gerardo Manuel [30%] | 2.4h | 90 | 90 |
| 240 | 1.2.4.3.3.6 | Revisión del pase por parte del A.F.C.C.T.I. | 8h | 2017-10-06 | 2017-10-06 | 239 | 2017-09-26 | 2017-09-26 | 8h | 41d | 0d |  | Huaraquispe Aranda Gerardo Manuel [30%] | 2.4h | 90 | 90 |
| 241 | 1.2.4.3.3.7 | Pruebas de Aceptación | 40h | 2017-10-09 | 2017-10-13 | 240 | 2017-09-27 | 2017-10-03 | 40h | 41d | 0d |  | Huaraquispe Aranda Gerardo Manuel [30%] | 12h | 450 | 450 |
| 242 | 1.2.4.3.4 | Solicitud de Pase a Producción | 16h | 2017-10-16 | 2017-10-17 | 241 | 2017-10-04 | 2017-10-05 | 16h | 41d |  |  | Huaraquispe Aranda Gerardo Manuel [30%] | 4.8h | 180 | 180 |
| 243 | 1.2.4.4 | **Componente 3: Registro Vehicular** | 42.5d | 2017-10-02 | 2017-11-30 |  | 2017-10-02 | 2017-11-30 | 42.5d | 5.5d |  |  |  | 417.6h | 13,445 | 13,445 |
| 244 | 1.2.4.4.1 | **Creación de BD** | 9d | 2017-10-02 | 2017-10-12 |  | 2017-10-02 | 2017-10-12 | 9d | 5.5d |  |  |  | 96h | 3,120 | 3,120 |
| 245 | 1.2.4.4.1.1 | Análisis del modelo de datos | 24h | 2017-10-02 | 2017-10-04 |  | 2017-10-02 | 2017-10-04 | 24h | 5.5d | 0d | start no earlier than 2017-10-02 | Huaraquispe Aranda Gerardo Manuel [30%]; López Cárdenas Edward Pavel [60%]; Luna Vasquez Julio Bryan [60%] | 36h | 1,170 | 1,170 |
| 246 | 1.2.4.4.1.2 | Modificación y ajustes del Modelo de datos actual | 16h | 2017-10-05 | 2017-10-06 | 245 | 2017-10-05 | 2017-10-06 | 16h | 5.5d | 0d |  | Huaraquispe Aranda Gerardo Manuel [30%]; López Cárdenas Edward Pavel [60%]; Luna Vasquez Julio Bryan [60%] | 24h | 780 | 780 |
| 247 | 1.2.4.4.1.3 | Elaboración de scripts para la creación de BD | 16h | 2017-10-09 | 2017-10-10 | 246 | 2017-10-09 | 2017-10-10 | 16h | 5.5d | 0d |  | Huaraquispe Aranda Gerardo Manuel [30%]; López Cárdenas Edward Pavel [60%]; Luna Vasquez Julio Bryan [60%] | 24h | 780 | 780 |
| 248 | 1.2.4.4.1.4 | Validación de scripts y estándares | 8h | 2017-10-11 | 2017-10-11 | 247 | 2017-10-11 | 2017-10-11 | 8h | 5.5d | 0d |  |  |  |  |  |
| 249 | 1.2.4.4.1.5 | Ejecución de scripts de creación de BD | 8h | 2017-10-12 | 2017-10-12 | 248 | 2017-10-12 | 2017-10-12 | 8h | 5.5d | 0d |  | Huaraquispe Aranda Gerardo Manuel [30%]; López Cárdenas Edward Pavel [60%]; Luna Vasquez Julio Bryan [60%] | 12h | 390 | 390 |
| 250 | 1.2.4.4.2 | **Implementación de Registro Vehicular** | 19.5d | 2017-10-13 | 2017-11-10 |  | 2017-10-13 | 2017-11-10 | 19.5d | 5.5d |  |  |  | 218.4h | 6,825 | 6,825 |
| 251 | 1.2.4.4.2.1 | Validaciones y reglas de negocio | 24h | 2017-10-13 | 2017-10-17 | 249 | 2017-10-13 | 2017-10-17 | 24h | 5.5d | 0d |  | López Cárdenas Edward Pavel [70%]; Luna Vasquez Julio Bryan [70%] | 33.6h | 1,050 | 1,050 |
| 252 | 1.2.4.4.2.2 | Consulta de DJ Vehicular | 24h | 2017-10-18 | 2017-10-20 | 251 | 2017-10-18 | 2017-10-20 | 24h | 5.5d | 0d |  | López Cárdenas Edward Pavel [70%]; Luna Vasquez Julio Bryan [70%] | 33.6h | 1,050 | 1,050 |
| 253 | 1.2.4.4.2.3 | Validación de Declaración Juarada | 12h | 2017-10-23 | 2017-10-24 | 252 | 2017-10-23 | 2017-10-24 | 12h | 5.5d | 0d |  | López Cárdenas Edward Pavel [70%]; Luna Vasquez Julio Bryan [70%] | 16.8h | 525 | 525 |
| 254 | 1.2.4.4.2.4 | Registro del Vehículo | 24h | 2017-10-24 | 2017-10-27 | 253 | 2017-10-24 | 2017-10-27 | 24h | 5.5d | 0d |  | López Cárdenas Edward Pavel [70%]; Luna Vasquez Julio Bryan [70%] | 33.6h | 1,050 | 1,050 |
| 255 | 1.2.4.4.2.5 | Registro de Datos de Adquisición | 16h | 2017-10-27 | 2017-10-31 | 254 | 2017-10-27 | 2017-10-31 | 16h | 5.5d | 0d |  | López Cárdenas Edward Pavel [70%]; Luna Vasquez Julio Bryan [70%] | 22.4h | 700 | 700 |
| 256 | 1.2.4.4.2.6 | Registro de Transferente | 8h | 2017-10-31 | 2017-11-02 | 255 | 2017-10-31 | 2017-11-02 | 8h | 5.5d | 0d |  | López Cárdenas Edward Pavel [70%]; Luna Vasquez Julio Bryan [70%] | 11.2h | 350 | 350 |
| 257 | 1.2.4.4.2.7 | Funcionalidad de Vista Preliminar e Imprimir | 16h | 2017-11-02 | 2017-11-06 | 256 | 2017-11-02 | 2017-11-06 | 16h | 5.5d | 0d |  | López Cárdenas Edward Pavel [70%]; Luna Vasquez Julio Bryan [70%] | 22.4h | 700 | 700 |
| 258 | 1.2.4.4.2.8 | Implementación de envío de correo | 16h | 2017-11-06 | 2017-11-08 | 257 | 2017-11-06 | 2017-11-08 | 16h | 5.5d | 0d |  | López Cárdenas Edward Pavel [70%]; Luna Vasquez Julio Bryan [70%] | 22.4h | 700 | 700 |
| 259 | 1.2.4.4.2.9 | Registro de Datos | 16h | 2017-11-08 | 2017-11-10 | 258 | 2017-11-08 | 2017-11-10 | 16h | 5.5d | 0d |  | López Cárdenas Edward Pavel [70%]; Luna Vasquez Julio Bryan [70%] | 22.4h | 700 | 700 |

| ID | WBS | Task | Type | Duration | Start | Finish | Predecessors | Complete | Remaining | Baseline start | Baseline finish | Baseline duration | Total slack | Free slack | Constraint | Resources | Work | Actual work | Cost | Baseline cost | Actual cost |
| --- | --- | --- | --- | --- | --- | --- | --- | --- | --- | --- | --- | --- | --- | --- | --- | --- | --- | --- | --- | --- | --- |
| 260 | 1.2.4.4.3 | **Pruebas** |  | 13d | 2017-11-10 | 2017-11-29 |  |  |  | 2017-11-10 | 2017-11-29 | 13d | 5.5d |  |  |  | 99.2h |  | 3,350 | 3,350 |  |
| 261 | 1.2.4.4.3.1 | Definición de Casos de pruebas |  | 8h | 2017-11-10 | 2017-11-13 | 259 |  |  | 2017-11-10 | 2017-11-13 | 8h | 5.5d | 0d |  | Huaraquispe Aranda Gerardo Manuel [30%]; López Cárdenas Edward Pavel [60%]; Luna Vasquez Julio Bryan [60%] | 12h |  | 390 | 390 |  |
| 262 | 1.2.4.4.3.2 | Validación de data de Prueba |  | 8h | 2017-11-13 | 2017-11-14 | 261 |  |  | 2017-11-13 | 2017-11-14 | 8h | 5.5d | 0d |  | Huaraquispe Aranda Gerardo Manuel [30%]; López Cárdenas Edward Pavel [60%]; Luna Vasquez Julio Bryan [60%] | 12h |  | 390 | 390 |  |
| 263 | 1.2.4.4.3.3 | Pruebas Unitarias |  | 24h | 2017-11-14 | 2017-11-17 | 262 |  |  | 2017-11-14 | 2017-11-17 | 24h | 5.5d | 0d |  | Huaraquispe Aranda Gerardo Manuel [30%]; López Cárdenas Edward Pavel [60%]; Luna Vasquez Julio Bryan [60%] | 36h |  | 1,170 | 1,170 |  |
| 264 | 1.2.4.4.3.4 | Ajustes |  | 8h | 2017-11-17 | 2017-11-20 | 263 |  |  | 2017-11-17 | 2017-11-20 | 8h | 5.5d | 0d |  | López Cárdenas Edward Pavel [70%]; Luna Vasquez Julio Bryan [70%] | 11.2h |  | 350 | 350 |  |
| 265 | 1.2.4.4.3.5 | Validación Final |  | 8h | 2017-11-20 | 2017-11-21 | 264 |  |  | 2017-11-20 | 2017-11-21 | 8h | 5.5d | 0d |  | Huaraquispe Aranda Gerardo Manuel [50%] | 4h |  | 150 | 150 |  |
| 266 | 1.2.4.4.3.6 | Revisión del pase por parte del A.F.C.C.T.I. |  | 16h | 2017-11-21 | 2017-11-23 | 265 |  |  | 2017-11-21 | 2017-11-23 | 16h | 5.5d | 0d |  | Huaraquispe Aranda Gerardo Manuel [50%] | 8h |  | 300 | 300 |  |
| 267 | 1.2.4.4.3.7 | Pruebas de Aceptación |  | 32h | 2017-11-23 | 2017-11-29 | 266 |  |  | 2017-11-23 | 2017-11-29 | 32h | 5.5d | 0d |  | Huaraquispe Aranda Gerardo Manuel [50%] | 16h |  | 600 | 600 |  |
| 268 | 1.2.4.4.4 | Solicitud de Pase a Producción |  | 8h | 2017-11-29 | 2017-11-30 | 267 |  |  | 2017-11-29 | 2017-11-30 | 8h | 5.5d | 0d |  | Huaraquispe Aranda Gerardo Manuel [50%] | 4h |  | 150 | 150 |  |
| 269 | 1.2.4.4.5 | Pase a Producción | milestone | 0d | 2017-11-30 | 2017-11-30 | 268 |  |  | 2017-11-30 | 2017-11-30 |  | 5.5d | 0d |  |  |  |  |  |  |  |
| 270 | 1.2.5 | **Apoyo al módulo de seguridad** |  | 3d | 2017-09-21 A | 2017-09-26 |  | 83% | 0.5d |  |  |  | 41d |  |  |  |  |  |  |  |  |
| 271 | 1.2.5.1 | Desarrollo de procedimientos de consulta ciudadano |  | 16h | 2017-09-21 A | 2017-09-25 A | 231 | 100% |  |  |  |  |  |  |  |  |  |  |  |  |  |
| 272 | 1.2.5.2 | Preparación de data de prueba |  | 8h | 2017-09-25 A | 2017-09-26 | 271 | 50% | 4h |  |  |  | 41d | 0d |  |  |  |  |  |  |  |
| 273 | 1.2.6 | **Actividades Complementarias** |  | 79d | 2017-08-10 A | 2017-11-30 |  | 52% | 37.61d | 2017-08-10 | 2017-11-30 | 79d | 10d |  |  |  | 450.4h | 246.2h | 9,495 | 9,195 | 4,903.75 |
| 274 | 1.2.6.1 | **Elaboración de procedimientos** |  | 43d | 2017-08-10 A | 2017-10-10 |  | 72% | 12.18d |  |  |  | 46d |  |  |  | 156h | 108.4h | 3,375 |  | 2,312.5 |
| 275 | 1.2.6.1.1 | Elaboración de Procedimiento de Control de Calidad de Registro por Entidades Externas |  | 16d | 2017-08-10 A | 2017-09-01 A |  | 100% |  | 2017-08-10 | 2017-09-01 | 16d |  |  | start no earlier than 2017-08-10 | De la Cruz Masías Alexander Romulo [20%]; Guzman Garay Fátima Fiorella [10%] | 38.4h | 38.4h | 800 | 800 | 800 |
| 276 | 1.2.6.1.2 | Elaboración de procedimiento de registro de ciudadano en Agencia Virtual |  | 14d | 2017-08-28 A | 2017-09-15 A | 280 | 100% |  | 2017-08-28 | 2017-09-15 | 14d |  |  |  | De la Cruz Masías Alexander Romulo [20%]; Guzman Garay Fátima Fiorella [10%] | 33.6h | 33.6h | 700 | 700 | 700 |
| 277 | 1.2.6.1.3 | Elaboración de Procedimiento de Atención de Consultas del uso de la Agencia Virtual |  | 15d | 2017-09-13 A | 2017-10-03 |  | 60% | 6d | 2017-09-13 | 2017-10-03 | 15d | 51d | 0d | start no earlier than 2017-09-13 | De la Cruz Masías Alexander Romulo [25%]; Guzman Garay Fátima Fiorella [10%] | 42h | 25.2h | 937.5 | 937.5 | 562.5 |
| 278 | 1.2.6.1.4 | Elaboración de procedimiento de Control de Calidad de Registro en Agencia Virtual |  | 15d | 2017-09-20 A | 2017-10-10 | 277SS+5d | 27% | 11d | 2017-09-20 | 2017-10-10 | 15d | 10d | 0d |  | De la Cruz Masías Alexander Romulo [25%]; Guzman Garay Fátima Fiorella [10%] | 42h | 11.2h | 937.5 | 937.5 | 250 |
| 279 | 1.2.6.2 | **Actualización de Formatos** |  | 16d | 2017-08-10 A | 2017-09-01 |  | 99% | 0d | 2017-08-10 | 2017-08-28 | 13d | 0d |  |  |  | 96h | 96h | 2,000 | 1,700 | 2,000 |
| 280 | 1.2.6.2.1 | Declaración Jurada de Impuesto vehicular para Agencia Virtual |  | 12d | 2017-08-10 A | 2017-08-25 A | 275SS | 100% |  | 2017-08-10 | 2017-08-25 | 12d |  |  |  | De la Cruz Masías Alexander Romulo [20%]; Guzman Garay Fátima Fiorella [10%] | 28.8h | 28.8h | 600 | 600 | 600 |
| 281 | 1.2.6.2.2 | Declaración Jurada de Acceso a la Agencia Virtual (Digital) |  | 14d | 2017-08-14 A | 2017-09-01 | 275SS+2d | 99% | 0d | 2017-08-14 | 2017-08-28 | 11d | 0d |  |  | De la Cruz Masías Alexander Romulo [20%]; Guzman Garay Fátima Fiorella [10%] | 33.6h | 33.6h | 700 | 550 | 700 |
| 282 | 1.2.6.2.3 | Declaración Jurada de Acceso a la Agencia Virtual (Manual) |  | 14d | 2017-08-14 A | 2017-09-01 | 275SS+2d | 99% | 0d | 2017-08-14 | 2017-08-28 | 11d | 0d |  |  | De la Cruz Masías Alexander Romulo [20%]; Guzman Garay Fátima Fiorella [10%] | 33.6h | 33.6h | 700 | 550 | 700 |
| 283 | 1.2.6.3 | **Dimensionamiento** |  | 36d | 2017-10-11 | 2017-11-30 |  |  |  | 2017-10-11 | 2017-11-30 | 36d | 10d |  |  |  | 100.8h |  | 2,250 | 2,250 |  |
| 284 | 1.2.6.3.1 | Elaboración de informe de Dimensionamiento I |  | 31d | 2017-10-11 | 2017-11-23 | 278 |  |  | 2017-10-11 | 2017-11-23 | 31d | 10d | 0d |  | De la Cruz Masías Alexander Romulo [25%]; Guzman Garay Fátima Fiorella [10%] | 86.8h |  | 1,937.5 | 1,937.5 |  |
| 285 | 1.2.6.3.2 | Revisión y Aprobación |  | 5d | 2017-11-24 | 2017-11-30 | 284 |  |  | 2017-11-24 | 2017-11-30 | 5d | 10d |  |  | De la Cruz Masías Alexander Romulo [25%]; Guzman Garay Fátima Fiorella [10%] | 14h |  | 312.5 | 312.5 |  |
| 286 | 1.2.6.4 | Elaboración de Matriz de Trazabilidad de Requisitos |  | 5d | 2017-08-18 A | 2017-08-24 A |  | 100% |  | 2017-08-18 | 2017-08-24 | 5d |  |  | start no earlier than 2017-08-18 | Acevedo Risco Melannie Cecilia [40%] | 16h | 16h |  |  |  |
| 287 | 1.2.6.5 | Actualización de Documentación Técnica |  | 68d | 2017-08-24 A | 2017-11-30 | 269FF | 32% | 46.5d | 2017-08-24 | 2017-11-30 | 68d | 10.5d |  |  | Huaraquispe Aranda Gerardo Manuel [5%]; De la Cruz Masías Alexander Romulo [5%]; Acevedo Risco Melannie Cecilia [5%] | 81.6h | 25.8h | 1,870 | 1,870 | 591.25 |
